# Commercial Construction

Schedule from MS Project, 2000-01-03 to 2001-04-26.

## Calendars

- Standard: Mon-Fri 08:00-12:00, 13:00-17:00; Sat-Sun off.

## Resources

| Resource |
| --- |
| G.C. General Management |
| G.C. Project Management |
| G.C. Procurement |
| G.C. Scheduler |
| G.C. Accounting |
| G.C. Superintendent |
| G.C. Survey Crew |
| G.C. Rough Carpenter Crew |
| G.C. Labor Crew |
| G.C. Concrete Crew |
| G.C. Finish Carpenter Crew |
| Site Grading Contractor |
| Plumbing Contractor |
| Plumbing Contractor Management |
| Electric Contractor |
| Electric Contractor Management |
| HVAC Contractor |
| HVAC Contractor Management |
| Elevator Contractor |
| Elevator Contractor Management |
| Steel Erection Contractor |
| Steel Erection Contractor Management |
| Drywall Contractor |
| Masonry Contractor |
| Tile Contractor |
| Roofing Contractor |
| Roofing Contractor Management |
| Window Contractor |
| Carpet Contractor |
| Landscape Contractor |
| Paving Contractor |
| Painting Contractor |

## Schedule

| ID | WBS | Task | Duration | Start | Finish | Predecessors | Total slack | Free slack | Resources | Work |
| --- | --- | --- | --- | --- | --- | --- | --- | --- | --- | --- |
| 1 | 1 | **Three-story Office Building (76,000 square feet)** | 344d | 2000-01-03 | 2001-04-26 |  | 0d |  |  | 7929.6h |
| 2 | 1.1 | **General Conditions** | 17d | 2000-01-03 | 2000-01-25 |  | 0d |  |  | 193.6h |
| 3 | 1.1.1 | Receive notice to proceed and sign contract | 3d | 2000-01-03 | 2000-01-05 |  | 0d |  | G.C. General Management | 24h |
| 4 | 1.1.2 | Submit bond and insurance documents | 2d | 2000-01-06 | 2000-01-07 | 3 | 335d | 0d | G.C. Project Management; G.C. General Management [25%] | 20h |
| 5 | 1.1.3 | Prepare and submit project schedule | 2d | 2000-01-10 | 2000-01-11 | 4 | 335d | 0d | G.C. Project Management [25%]; G.C. Scheduler | 20h |
| 6 | 1.1.4 | Prepare and submit schedule of values | 2d | 2000-01-12 | 2000-01-13 | 5 | 335d |  | G.C. General Management [10%]; G.C. Project Management | 17.6h |
| 7 | 1.1.5 | Obtain building permits | 4d | 2000-01-06 | 2000-01-11 | 3 | 99d | 0d | G.C. Project Management [50%]; G.C. Procurement [50%] | 32h |
| 8 | 1.1.6 | Submit preliminary shop drawings | 2w | 2000-01-12 | 2000-01-25 | 7 | 99d | 0d | G.C. Project Management [50%]; G.C. Procurement [50%] | 80h |
| 9 | 1.1.7 | Submit monthly requests for payment | 1d | 2000-01-06 | 2000-01-06 | 3 | 7d | 0d |  |  |
| 10 | 1.2 | **Long Lead Procurement** | 70d | 2000-01-07 | 2000-04-13 |  | 7d |  |  | 960h |
| 11 | 1.2.1 | Submit shop drawings and order long lead items - steel | 2w | 2000-01-07 | 2000-01-20 | 9 | 7d | 0d | Steel Erection Contractor Management | 80h |
| 12 | 1.2.2 | Submit shop drawings and order long lead items - roofing | 2w | 2000-01-26 | 2000-02-08 | 8 | 268d | 193d | Roofing Contractor Management | 80h |
| 13 | 1.2.3 | Submit shop drawings and order long lead items - elevator | 2w | 2000-01-26 | 2000-02-08 | 8 | 258d | 104d | Elevator Contractor Management | 80h |
| 14 | 1.2.4 | Submit shop drawings and order long lead items - plumbing | 2w | 2000-01-26 | 2000-02-08 | 8 | 99d |  | Plumbing Contractor Management | 80h |
| 15 | 1.2.5 | Submit shop drawings and order long lead items - electric | 2w | 2000-01-26 | 2000-02-08 | 8 | 99d |  | Electric Contractor Management | 80h |
| 16 | 1.2.6 | Submit shop drawings and order long lead items - HVAC | 2w | 2000-01-26 | 2000-02-08 | 8 | 99d |  | HVAC Contractor Management | 80h |
| 17 | 1.2.7 | Detail, fabricate and deliver steel | 12w | 2000-01-21 | 2000-04-13 | 11 | 7d |  | Steel Erection Contractor Management [50%]; Steel Erection Contractor [50%] | 480h |
| 18 | 1.3 | **Mobilize on Site** | 10d | 2000-01-06 | 2000-01-19 |  | 0d |  |  | 100h |
| 19 | 1.3.1 | Install temporary power | 2d | 2000-01-06 | 2000-01-07 | 3 | 0d |  | Electric Contractor | 16h |
| 20 | 1.3.2 | Install temporary water service | 2d | 2000-01-06 | 2000-01-07 | 3 | 0d |  | Plumbing Contractor | 16h |
| 21 | 1.3.3 | Set up site office | 3d | 2000-01-10 | 2000-01-12 | 19, 20 | 0d |  | G.C. Superintendent; G.C. Labor Crew [10%] | 26.4h |
| 22 | 1.3.4 | Set line and grade benchmarks | 3d | 2000-01-13 | 2000-01-17 | 21 | 0d |  | G.C. Survey Crew | 24h |
| 23 | 1.3.5 | Prepare site - lay down yard and temporary fencing | 2d | 2000-01-18 | 2000-01-19 | 22 | 0d |  | Site Grading Contractor; G.C. Labor Crew [10%] | 17.6h |
| 24 | 1.4 | **Site Grading and Utilities** | 35d | 2000-01-20 | 2000-03-08 |  | 0d |  |  | 360h |
| 25 | 1.4.1 | Clear and grub site | 3d | 2000-01-20 | 2000-01-24 | 21, 23 | 0d |  | Site Grading Contractor | 24h |
| 26 | 1.4.2 | Stone site access and temporary parking area | 2d | 2000-01-25 | 2000-01-26 | 25, 23 | 0d |  | Site Grading Contractor | 16h |
| 27 | 1.4.3 | Rough grade site (cut and fill) | 1w | 2000-01-27 | 2000-02-02 | 26 | 0d |  | Site Grading Contractor | 40h |
| 28 | 1.4.4 | Install storm drainage | 2w | 2000-02-03 | 2000-02-16 | 27 | 9d |  | Site Grading Contractor | 80h |
| 29 | 1.4.5 | Install exterior fire line and building fire riser | 2w | 2000-02-03 | 2000-02-16 | 27 | 0d |  | Plumbing Contractor | 80h |
| 30 | 1.4.6 | Perform final site grading | 2w | 2000-02-17 | 2000-03-01 | 28FF+1d, 29 | 0d |  | Site Grading Contractor | 80h |
| 31 | 1.4.7 | Erect building batter boards and layout building | 1w | 2000-03-02 | 2000-03-08 | 30 | 0d |  | G.C. Survey Crew | 40h |

Notes:
- 9: Monthly requests for payment can be entered as a recurring task. See the Help topic "Enter a recurring task."

| ID | WBS | Task | Duration | Start | Finish | Predecessors | Total slack | Free slack | Resources | Work |
| --- | --- | --- | --- | --- | --- | --- | --- | --- | --- | --- |
| 32 | 1.5 | **Foundations** | 33d | 2000-03-09 | 2000-04-24 |  | 0d |  |  | 332h |
| 33 | 1.5.1 | Excavate foundations | 2w | 2000-03-09 | 2000-03-22 | 31 | 0d |  | Site Grading Contractor [50%] | 40h |
| 34 | 1.5.2 | Excavate elevator pit | 2d | 2000-03-09 | 2000-03-10 | 31 | 214d | 0d | Site Grading Contractor | 16h |
| 35 | 1.5.3 | Form column piers and spread foundations | 4d | 2000-03-23 | 2000-03-28 | 33 | 0d |  | G.C. Rough Carpenter Crew | 32h |
| 36 | 1.5.4 | Rough-in electric and plumbing in elevator | 4d | 2000-03-13 | 2000-03-16 | 34 | 214d | 0d | Plumbing Contractor; Electric Contractor | 64h |
| 37 | 1.5.5 | Form elevator pit walls | 4d | 2000-03-17 | 2000-03-22 | 36 | 214d | 0d | G.C. Rough Carpenter Crew | 32h |
| 38 | 1.5.6 | Set reinforcing and anchor bolts | 4d | 2000-03-29 | 2000-04-03 | 35 | 0d |  | G.C. Rough Carpenter Crew | 32h |
| 39 | 1.5.7 | Pour column piers and foundations | 5d | 2000-04-04 | 2000-04-10 | 38 | 0d |  | G.C. Concrete Crew | 40h |
| 40 | 1.5.8 | Pour concrete elevator walls | 1d | 2000-03-23 | 2000-03-23 | 37 | 214d | 0d | G.C. Concrete Crew | 8h |
| 41 | 1.5.9 | Cure elevator wall concrete | 7d | 2000-03-24 | 2000-04-03 | 40 | 214d | 0d | G.C. Labor Crew [10%] | 5.6h |
| 42 | 1.5.10 | Cure piers and foundations | 7d | 2000-04-11 | 2000-04-19 | 39 | 0d |  | G.C. Labor Crew [10%] | 5.6h |
| 43 | 1.5.11 | Strip wall forms | 1d | 2000-04-04 | 2000-04-04 | 41 | 214d | 0d | G.C. Labor Crew [10%] | 0.8h |
| 44 | 1.5.12 | Strip column piers and foundation forms | 3d | 2000-04-20 | 2000-04-24 | 42 | 0d |  | G.C. Labor Crew | 24h |
| 45 | 1.5.13 | Install pneumatic tube in elevator pit | 3d | 2000-04-05 | 2000-04-07 | 43 | 214d | 0d | Elevator Contractor | 24h |
| 46 | 1.5.14 | Prepare and pour concrete floor in elevator pit | 1d | 2000-04-10 | 2000-04-10 | 45 | 214d | 60d | G.C. Concrete Crew | 8h |
| 47 | 1.6 | **Steel Erection** | 45d | 2000-04-25 | 2000-06-26 |  | 0d |  |  | 328h |
| 48 | 1.6.1 | Erect steel columns, beams and joist - 1st and 2nd floors | 2w | 2000-04-25 | 2000-05-08 | 44, 17 | 0d |  | Steel Erection Contractor | 80h |
| 49 | 1.6.2 | Erect steel columns, beams and joist - 3rd floor and roof | 2w | 2000-05-09 | 2000-05-22 | 48 | 0d |  | Steel Erection Contractor | 80h |
| 50 | 1.6.3 | Install miscellaneous iron and bracing - 1st and 2nd floors | 2w | 2000-05-09 | 2000-05-22 | 48 | 164d | 10d | Steel Erection Contractor [75%] | 60h |
| 51 | 1.6.4 | Install miscellaneous iron and bracing - 3rd floor and roof | 2w | 2000-05-23 | 2000-06-05 | 49 | 0d |  | Steel Erection Contractor [75%] | 60h |
| 52 | 1.6.5 | Install stairs and miscellaneous iron railing | 2w | 2000-06-06 | 2000-06-19 | 51 | 0d |  | Steel Erection Contractor [50%] | 40h |
| 53 | 1.6.6 | Touch-up paint on steel | 1w | 2000-06-20 | 2000-06-26 | 52 | 0d |  | Steel Erection Contractor [20%] | 8h |
| 54 | 1.7 | **Form and Pour Concrete - Floors and Roof** | 85d | 2000-05-09 | 2000-09-04 |  | 35d |  |  | 600.88h |
| 55 | 1.7.1 | Form 2nd floor including all floor openings | 5d | 2000-06-27 | 2000-07-03 | 53, 14, 15, 16, 48 | 0d |  | G.C. Rough Carpenter Crew; G.C. Labor Crew [20%] | 48h |
| 56 | 1.7.2 | Install rebar and in-floor utilities (including mechanical, electrical, plumbing) | 5d | 2000-05-09 | 2000-05-15 | 48 | 35d |  | G.C. Labor Crew [33%]; Plumbing Contractor [33%]; Electric Contractor [33%] | 39.6h |
| 57 | 1.7.3 | Pour 2nd floor slab | 4d | 2000-07-04 | 2000-07-07 | 56, 55 | 0d |  | G.C. Concrete Crew | 32h |
| 58 | 1.7.4 | Cure 2nd floor slab | 7d | 2000-07-10 | 2000-07-18 | 57 | 0d |  | G.C. Labor Crew [10%] | 5.6h |
| 59 | 1.7.5 | Strip forms from 2nd floor slab | 2d | 2000-07-19 | 2000-07-20 | 58 | 99d | 0d | G.C. Labor Crew | 16h |
| 60 | 1.7.6 | Form 3rd floor including all floor openings | 5d | 2000-07-19 | 2000-07-25 | 58 | 0d |  | G.C. Rough Carpenter Crew [50%]; G.C. Labor Crew [20%] | 28h |
| 61 | 1.7.7 | Install rebar and in-floor utilities (including mechanical, electrical, plumbing) | 5d | 2000-07-19 | 2000-07-25 | 58 | 0d |  | G.C. Labor Crew [33%]; Plumbing Contractor [33%]; Electric Contractor [33%] | 39.6h |
| 62 | 1.7.8 | Pour 3rd floor slab | 4d | 2000-07-26 | 2000-07-31 | 61, 60 | 0d |  | G.C. Concrete Crew | 32h |
| 63 | 1.7.9 | Cure 3rd floor slab | 7d | 2000-08-01 | 2000-08-09 | 62 | 0d |  | G.C. Labor Crew [10%] | 5.6h |
| 64 | 1.7.10 | Strip forms from 3rd floor slab | 2d | 2000-08-10 | 2000-08-11 | 63 | 16d |  | G.C. Labor Crew | 16h |
| 65 | 1.7.11 | Form roof slab including all floor openings | 5d | 2000-08-10 | 2000-08-16 | 63 | 0d |  | G.C. Rough Carpenter Crew; G.C. Labor Crew [20%] | 48h |
| 66 | 1.7.12 | Install rebar and in-floor utilities (including mechanical, electrical, plumbing) | 5d | 2000-08-10 | 2000-08-16 | 63 | 0d |  | G.C. Labor Crew [33%]; Plumbing Contractor [33%]; Electric Contractor [33%] | 39.6h |
| 67 | 1.7.13 | Pour roof slab | 4d | 2000-08-17 | 2000-08-22 | 66, 65 | 0d |  | G.C. Concrete Crew | 32h |
| 68 | 1.7.14 | Cure roof slab | 7d | 2000-08-23 | 2000-08-31 | 67 | 0d |  | G.C. Labor Crew [10%] | 5.6h |
| 69 | 1.7.15 | Strip forms from roof slab | 2d | 2000-09-01 | 2000-09-04 | 68 | 0d |  | G.C. Labor Crew | 16h |
| 70 | 1.7.16 | Form 1st floor | 4d | 2000-07-21 | 2000-07-26 | 59 | 100d | 1d | G.C. Rough Carpenter Crew | 32h |
| 71 | 1.7.17 | Install electrical underground | 1w | 2000-07-21 | 2000-07-27 | 59 | 99d | 0d | Electric Contractor | 40h |
| 72 | 1.7.18 | Install plumbing underground | 1w | 2000-07-21 | 2000-07-27 | 59 | 99d | 0d | Plumbing Contractor | 40h |
| 73 | 1.7.19 | Install rebar and in-floor utilities | 4d | 2000-07-21 | 2000-07-26 | 59 | 100d | 1d | G.C. Labor Crew [33%]; Plumbing Contractor [33%]; Electric Contractor [33%] | 31.68h |
| 74 | 1.7.20 | Pour 1st floor slab | 4d | 2000-07-28 | 2000-08-02 | 70, 73, 71, 72 | 99d | 0d | G.C. Concrete Crew | 32h |
| 75 | 1.7.21 | Cure 1st floor slab | 7d | 2000-08-03 | 2000-08-11 | 74 | 99d | 0d | G.C. Labor Crew [10%] | 5.6h |
| 76 | 1.7.22 | Strip forms from 1st floor slab | 2d | 2000-08-14 | 2000-08-15 | 75 | 99d | 0d | G.C. Labor Crew | 16h |

| ID | WBS | Task | Duration | Start | Finish | Predecessors | Total slack | Free slack | Resources | Work |
| --- | --- | --- | --- | --- | --- | --- | --- | --- | --- | --- |
| 77 | 1.8 | **Carpentry Work** | 15d | 2000-09-05 | 2000-09-25 |  | 0d |  |  | 120h |
| 78 | 1.8.1 | Install exterior sheathing and metal studs | 3w | 2000-09-05 | 2000-09-25 | 64, 69 | 0d |  | Drywall Contractor | 120h |
| 79 | 1.9 | **Masonry Work** | 110d | 2000-06-06 | 2000-11-06 |  | 80d |  |  | 656h |
| 80 | 1.9.1 | Rough-in plumbing at toilets and masonry walls | 4w | 2000-08-16 | 2000-09-12 | 76, 14 | 99d | 0d | Plumbing Contractor | 160h |
| 81 | 1.9.2 | Lay masonry at core, mechanical, and toilets | 4w | 2000-06-06 | 2000-07-03 | 50, 51 | 154d | 0d | Masonry Contractor | 160h |
| 82 | 1.9.3 | Install exterior masonry work | 5w | 2000-09-26 | 2000-10-30 | 78 | 0d |  | Masonry Contractor | 200h |
| 83 | 1.9.4 | Install roof drains | 2d | 2000-10-31 | 2000-11-01 | 82 | 77d | 2d | Roofing Contractor | 16h |
| 84 | 1.9.5 | Install tile in toilet rooms | 2w | 2000-09-13 | 2000-09-26 | 80 | 99d | 0d | Tile Contractor | 80h |
| 85 | 1.9.6 | Clean masonry | 1w | 2000-10-31 | 2000-11-06 | 82 | 80d | 0d | Masonry Contractor [50%] | 20h |
| 86 | 1.9.7 | Clean toilet room tile | 1w | 2000-09-27 | 2000-10-03 | 84 | 99d | 64d | Tile Contractor [50%] | 20h |
| 87 | 1.10 | **Roofing** | 31d | 2000-10-31 | 2000-12-12 |  | 75d |  |  | 208h |
| 88 | 1.10.1 | Install flashing at parapet walls | 4d | 2000-10-31 | 2000-11-03 | 82 | 75d | 0d | Roofing Contractor | 32h |
| 89 | 1.10.2 | Pour lightweight concrete roof fill | 2d | 2000-11-06 | 2000-11-07 | 12, 83, 88 | 75d | 0d | Roofing Contractor | 16h |
| 90 | 1.10.3 | Install seamless roofing material | 5d | 2000-11-15 | 2000-11-21 | 89FS+5d | 75d | 0d | Roofing Contractor | 40h |
| 91 | 1.10.4 | Spread stone ballast on seamless roof | 5d | 2000-11-22 | 2000-11-28 | 90 | 75d | 0d | Roofing Contractor | 40h |
| 92 | 1.10.5 | Set rooftop equipment | 2w | 2000-11-29 | 2000-12-12 | 91 | 75d | 24d | HVAC Contractor | 80h |
| 93 | 1.11 | **Window wall and store front closures** | 60d | 2000-10-31 | 2001-01-22 |  | 0d |  |  | 600h |
| 94 | 1.11.1 | Install window wall aluminum and glass | 5w | 2000-10-31 | 2000-12-04 | 82 | 0d |  | Window Contractor | 200h |
| 95 | 1.11.2 | Install interior stud walls and drywall | 5w | 2000-12-05 | 2001-01-08 | 94 | 0d |  | Drywall Contractor | 200h |
| 96 | 1.11.3 | Install interior doors and hardware | 2w | 2001-01-09 | 2001-01-22 | 95 | 5d |  | G.C. Finish Carpenter Crew | 80h |
| 97 | 1.11.4 | Install store front doors and hardware | 3w | 2000-10-31 | 2000-11-20 | 82 | 35d |  | Window Contractor | 120h |
| 98 | 1.12 | **Building Finishes** | 80d | 2000-12-05 | 2001-03-26 |  | 7d |  |  | 1200h |
| 99 | 1.12.1 | Install millwork and wood trim | 3w | 2001-01-09 | 2001-01-29 | 97, 95 | 0d |  | G.C. Finish Carpenter Crew | 120h |
| 100 | 1.12.2 | Paint walls and woodwork | 4w | 2001-01-30 | 2001-02-26 | 99, 96 | 0d |  | Painting Contractor | 160h |
| 101 | 1.12.3 | Install conduit at ceiling plenum space | 3w | 2000-12-05 | 2000-12-25 | 94 | 25d | 0d | Electric Contractor | 120h |
| 102 | 1.12.4 | Install duct in ceiling plenum space | 3w | 2001-01-09 | 2001-01-29 | 95, 101 | 20d | 0d | HVAC Contractor | 120h |
| 103 | 1.12.5 | Install ceiling grid | 2w | 2001-01-30 | 2001-02-12 | 95, 102 | 20d | 0d | Drywall Contractor | 80h |
| 104 | 1.12.6 | Install ceiling tile | 2w | 2001-02-13 | 2001-02-26 | 103 | 20d |  | Drywall Contractor | 80h |
| 105 | 1.12.7 | Hang wallpaper | 2w | 2001-02-13 | 2001-02-26 | 103 | 20d |  | Painting Contractor | 80h |
| 106 | 1.12.8 | Install building carpet | 4w | 2001-02-27 | 2001-03-26 | 100 | 0d |  | Carpet Contractor | 160h |
| 107 | 1.12.9 | Install hardware and accessories | 3w | 2001-02-27 | 2001-03-19 | 100 | 5d |  | G.C. Finish Carpenter Crew | 120h |
| 108 | 1.12.10 | Complete interior and exterior sod and plantings | 2w | 2001-02-27 | 2001-03-12 | 100 | 7d | 0d | Landscape Contractor | 80h |
| 109 | 1.12.11 | Pave, curb, and stripe parking lot | 2w | 2001-03-13 | 2001-03-26 | 108 | 7d |  | Paving Contractor | 80h |

| ID | WBS | Task | Duration | Start | Finish | Predecessors | Total slack | Free slack | Resources | Work |
| --- | --- | --- | --- | --- | --- | --- | --- | --- | --- | --- |
| 110 | 1.13 | **Elevators** | 40d | 2000-07-04 | 2000-08-28 |  | 154d |  |  | 320h |
| 111 | 1.13.1 | Set elevator equipment in shafts | 4w | 2000-07-04 | 2000-07-31 | 81, 46, 13 | 154d | 0d | Elevator Contractor | 160h |
| 112 | 1.13.2 | Set equipment in mechanical room | 2w | 2000-08-01 | 2000-08-14 | 111 | 154d | 0d | Elevator Contractor | 80h |
| 113 | 1.13.3 | Test and align doors and equipment | 2w | 2000-08-15 | 2000-08-28 | 112 | 154d |  | Elevator Contractor | 80h |
| 114 | 1.14 | **Plumbing** | 90d | 2000-11-07 | 2001-03-12 |  | 10d |  |  | 440h |
| 115 | 1.14.1 | Rough-in plumbing in drywall walls | 4w | 2000-12-05 | 2001-01-01 | 94 | 35d | 0d | Plumbing Contractor | 160h |
| 116 | 1.14.2 | Tie-in fire line riser and set valves | 2w | 2000-11-07 | 2000-11-20 | 85 | 80d | 70d | Plumbing Contractor | 80h |
| 117 | 1.14.3 | Set plumbing fixtures and trim | 3w | 2001-01-02 | 2001-01-22 | 86, 115, 80 | 35d | 25d | Plumbing Contractor | 120h |
| 118 | 1.14.4 | Flush, test, and clean piping and fixtures | 2w | 2001-02-27 | 2001-03-12 | 100, 116, 117 | 10d |  | Plumbing Contractor | 80h |
| 119 | 1.15 | **Electrical** | 139d | 2000-08-16 | 2001-02-26 |  | 23d |  |  | 656h |
| 120 | 1.15.1 | Rough-in electrical in masonry walls | 4w | 2000-08-16 | 2000-09-12 | 76, 15 | 99d | 74d | Electric Contractor | 160h |
| 121 | 1.15.2 | Rough-in electrical in drywall walls | 4w | 2000-12-05 | 2001-01-01 | 94 | 35d | 10d | Electric Contractor | 160h |
| 122 | 1.15.3 | Pull wire in conduit and set area transformers | 3w | 2000-12-26 | 2001-01-15 | 120, 101 | 25d | 0d | Electric Contractor | 120h |
| 123 | 1.15.4 | Install and terminate electrical devices | 3w | 2001-01-16 | 2001-02-05 | 122, 121 | 25d | 5d | Electric Contractor | 120h |
| 124 | 1.15.5 | Make electrical terminations for HVAC equipment | 2d | 2001-01-16 | 2001-01-17 | 122, 92 | 51d | 18d | Electric Contractor | 16h |
| 125 | 1.15.6 | Install light fixtures - test and clean | 2w | 2001-02-13 | 2001-02-26 | 103, 123 | 20d |  | Electric Contractor | 80h |
| 126 | 1.16 | **Heating and Ventilating - AC** | 180d | 2000-07-04 | 2001-03-12 |  | 33d |  |  | 600h |
| 127 | 1.16.1 | Set equipment in mechanical room | 2w | 2000-07-04 | 2000-07-17 | 81, 16 | 168d | 100d | HVAC Contractor | 80h |
| 128 | 1.16.2 | Rough-in mechanical in masonry walls | 4w | 2000-08-16 | 2000-09-12 | 76 | 127d | 59d | HVAC Contractor | 160h |
| 129 | 1.16.3 | Rough-in mechanical in drywall walls | 2w | 2000-12-05 | 2000-12-18 | 94 | 93d |  | HVAC Contractor | 80h |
| 130 | 1.16.4 | Install duct in building chase | 3w | 2000-12-05 | 2000-12-25 | 127, 128, 94 | 68d | 35d | HVAC Contractor | 120h |
| 131 | 1.16.5 | Set HVAC trim and test and balance system | 4w | 2001-02-13 | 2001-03-12 | 103, 130, 124 | 33d |  | HVAC Contractor | 160h |
| 132 | 1.17 | **Final Clean-up and Occupancy** | 60d | 2001-01-09 | 2001-04-02 |  | 18d |  |  | 96h |
| 133 | 1.17.1 | Install hard tile flooring in common areas | 1w | 2001-01-09 | 2001-01-15 | 95 | 46d | 0d | Tile Contractor | 40h |
| 134 | 1.17.2 | Clean hard tile floors | 4d | 2001-01-16 | 2001-01-19 | 133 | 46d |  | Tile Contractor [50%] | 16h |
| 135 | 1.17.3 | Remove debris from building and do final clean-up | 4d | 2001-03-27 | 2001-03-30 | 106, 105, 107, 108, 118, 125, 104, 134 | 0d |  | G.C. Labor Crew | 32h |
| 136 | 1.17.4 | Substantial completion date | 1d | 2001-04-02 | 2001-04-02 | 135 | 18d |  | G.C. Superintendent | 8h |

| ID | WBS | Task | Duration | Start | Finish | Predecessors | Total slack | Resources | Work |
| --- | --- | --- | --- | --- | --- | --- | --- | --- | --- |
| 137 | 1.18 | **Complete Final Inspections** | 6d | 2001-04-02 | 2001-04-09 |  | 0d |  | 48h |
| 138 | 1.18.1 | Complete elevator inspection and certification | 3d | 2001-04-02 | 2001-04-04 | 135, 113 | 0d | Elevator Contractor | 24h |
| 139 | 1.18.2 | Perform architect's inspection | 1d | 2001-04-05 | 2001-04-05 | 135, 109, 138 | 0d | G.C. Superintendent [50%]; G.C. Project Management [50%] | 8h |
| 140 | 1.18.3 | Perform local building agency inspection | 1d | 2001-04-06 | 2001-04-06 | 139 | 0d | G.C. Project Management [50%]; G.C. Superintendent [50%] | 8h |
| 141 | 1.18.4 | Perform Fire Marshal's inspection | 1d | 2001-04-09 | 2001-04-09 | 140 | 0d | G.C. Superintendent [50%]; G.C. Project Management [50%] | 8h |
| 142 | 1.19 | Complete punch list items from all inspections | 2w | 2001-04-10 | 2001-04-23 | 141 | 0d | G.C. Superintendent [11%]; G.C. Labor Crew [11%]; Plumbing Contractor [11%]; Electric Contractor [11%]; HVAC Contractor [11%]; Drywall Contractor [11%]; Carpet Contractor [11%]; Paving Contractor [11%]; Painting Contractor [11%] | 79.2h |
| 143 | 1.20 | Obtain certificate of occupancy | 2d | 2001-04-24 | 2001-04-25 | 142 | 0d | G.C. Project Management | 16h |
| 144 | 1.21 | Issue final completion documents including warranties | 1d | 2001-04-24 | 2001-04-24 | 142 | 1d | G.C. Project Management | 8h |
| 145 | 1.22 | Issue final request for payment | 1d | 2001-04-26 | 2001-04-26 | 143, 144 | 0d | G.C. Project Management [33%]; G.C. Accounting [33%]; G.C. General Management [33%] | 7.92h |
