# Microsoft Office Project 2003 Deployment

Schedule from MS Project, 2003-09-15 to 2004-03-05.

## Calendars

- Standard: Mon-Fri 08:00-12:00, 13:00-17:00; Sat-Sun off.

## Resources

| Resource |
| --- |
| Database Administrator |
| Network Administrator |
| Business Analysts |
| Project Managers |
| IT Staff |
| Server Administrator |
| Systems Architect |
| Desktop Support |
| Application Deployment |
| Team Members |
| Business Sponsors |
| Application Developers |

## Schedule

| ID | WBS | Task | Type | Duration | Start | Finish | Predecessors | Total slack | Resources | Work |
| --- | --- | --- | --- | --- | --- | --- | --- | --- | --- | --- |
| 1 | 1 | **Microsoft Office Project 2003 Deployment** |  | 124.75d | 2003-09-15 | 2004-03-05 |  | 0d |  | 3058.4h |
| 2 | 1.1 | **Envisioning** |  | 7.5d | 2003-09-15 | 2003-09-24 |  | 0d |  | 120h |
| 3 | 1.1.1 | Evaluate corporate business objectives (per EPM Enterprise Implementation Framework) |  | 20h | 2003-09-15 | 2003-09-17 |  | 0d | Business Analysts; Business Sponsors | 40h |
| 4 | 1.1.2 | Determine technology goals and objectives |  | 1d | 2003-09-17 | 2003-09-18 | 3 | 0d | Business Analysts; Business Sponsors | 16h |
| 5 | 1.1.3 | Formulate preliminary cost/benefit analysis |  | 1d | 2003-09-18 | 2003-09-19 | 4 | 0d | Business Analysts; Business Sponsors | 16h |
| 6 | 1.1.4 | Determine project vision and scope (for example, lab, pilot, international/regional deployment, coexistence strategies) |  | 1d | 2003-09-19 | 2003-09-22 | 5 | 0d | Business Analysts; Business Sponsors | 16h |
| 7 | 1.1.5 | Determine major milestones |  | 1d | 2003-09-22 | 2003-09-23 | 6 | 0d | Business Analysts; Business Sponsors | 16h |
| 8 | 1.1.6 | Secure executive sponsorship/funding |  | 1d | 2003-09-23 | 2003-09-24 | 7 | 0d | Business Analysts; Business Sponsors | 16h |
| 9 | 1.1.7 | Envisioning complete | milestone | 0d | 2003-09-24 | 2003-09-24 | 8 | 0d |  |  |
| 10 | 1.2 | **Planning** |  | 7.5d | 2003-09-24 | 2003-10-03 | 2 | 0d |  | 1004h |
| 11 | 1.2.1 | **Plan Software Configuration** |  | 3d | 2003-09-24 | 2003-09-29 |  | 0d |  | 100h |
| 12 | 1.2.1.1 | **Design Impelementation Configuration** |  | 1d | 2003-09-24 | 2003-09-25 |  | 0d |  | 24h |
| 13 | 1.2.1.1.1 | Business analysis completed per EPM Enterprise Implementation Framework | milestone | 0d | 2003-09-24 | 2003-09-24 |  | 1d | Business Analysts |  |
| 14 | 1.2.1.1.2 | Configuration settings determined and documented per EPM Enterprise Implementation Framework | milestone | 0d | 2003-09-24 | 2003-09-24 |  | 1d | Business Analysts |  |
| 15 | 1.2.1.1.3 | Functional specifications completed per EPM Enterprise Implementation Framework | milestone | 0d | 2003-09-24 | 2003-09-24 |  | 1d | Business Analysts |  |
| 16 | 1.2.1.1.4 | Build implementation team |  | 1d | 2003-09-24 | 2003-09-25 |  | 0d | Business Analysts; Project Managers; Business Sponsors | 24h |
| 17 | 1.2.1.1.5 | Project success metrics defined | milestone | 0d | 2003-09-24 | 2003-09-24 |  | 1d | Business Analysts |  |
| 18 | 1.2.1.2 | **Determine Functional Components to Install** |  | 1d | 2003-09-25 | 2003-09-26 | 12 | 0d |  | 40h |
| 19 | 1.2.1.2.1 | Decide between Microsoft SQL Server or the MSDE |  | 1d | 2003-09-25 | 2003-09-26 |  | 0d | Database Administrator | 8h |
| 20 | 1.2.1.2.2 | Consider Microsoft SQL Server Analysis Services |  | 1d | 2003-09-25 | 2003-09-26 |  | 0d | Business Analysts | 8h |
| 21 | 1.2.1.2.3 | Consider Microsoft SharePoint Portal Server "v2.0" |  | 1d | 2003-09-25 | 2003-09-26 |  | 0d | Business Analysts | 8h |
| 22 | 1.2.1.2.4 | Consider Microsoft Windows SharePoint Services |  | 1d | 2003-09-25 | 2003-09-26 |  | 0d | Business Analysts | 8h |
| 23 | 1.2.1.2.5 | Consider Microsoft Windows Terminal Services |  | 1d | 2003-09-25 | 2003-09-26 |  | 0d | Network Administrator | 8h |
| 24 | 1.2.1.3 | **Identify Configuration Constraints** |  | 1d | 2003-09-26 | 2003-09-29 | 18 | 0d |  | 36h |
| 25 | 1.2.1.3.1 | Review feature requirements |  | 1d | 2003-09-26 | 2003-09-29 |  | 0d | Business Analysts | 8h |
| 26 | 1.2.1.3.2 | Review organizational software standards |  | 1d | 2003-09-26 | 2003-09-29 |  | 0d | Business Analysts; Systems Architect | 16h |
| 27 | 1.2.1.3.3 | Determine implementation constraints including architecture and deployment |  | 4h | 2003-09-26 | 2003-09-26 |  | 0.5d | Database Administrator; Network Administrator; Systems Architect | 12h |
| 28 | 1.2.1.4 | Plan software configuration complete | milestone | 0d | 2003-09-29 | 2003-09-29 | 12, 18, 24 | 0d |  |  |

Notes:
- 1: This Project template is designed to facilitate the deployment of Microsoft Office Project 2003 in a corporate environment. The template is designed to focus the implementation on key steps that can ensure a successful, well-planned implementation. / See Help to learn more about each section of this template and where to find additional information. / For information on the EPM Enterprise Implementation Framework, see http://www.microsoft.com/project/.

| ID | WBS | Task | Duration | Start | Finish | Predecessors | Total slack | Free slack | Resources | Work |
| --- | --- | --- | --- | --- | --- | --- | --- | --- | --- | --- |
| 29 | 1.2.2 | **Perform Capacity Planning** | 3d | 2003-09-29 | 2003-10-02 | 11 | 1.5d |  |  | 224h |
| 30 | 1.2.2.1 | Identify roles of users | 1d | 2003-09-29 | 2003-09-30 |  | 1.5d | 0d | Business Analysts | 8h |
| 31 | 1.2.2.2 | **Determine number of users in various role** | 1d | 2003-09-30 | 2003-10-01 | 30 | 1.5d | 0d |  | 32h |
| 32 | 1.2.2.2.1 | Document number of Project Managers | 1d | 2003-09-30 | 2003-10-01 |  | 1.5d |  | Business Analysts | 8h |
| 33 | 1.2.2.2.2 | Document number of Team Members | 1d | 2003-09-30 | 2003-10-01 |  | 1.5d |  | Business Analysts | 8h |
| 34 | 1.2.2.2.3 | Document number of Executives | 1d | 2003-09-30 | 2003-10-01 |  | 1.5d |  | Business Analysts | 8h |
| 35 | 1.2.2.2.4 | Document number of External Project Managers | 1d | 2003-09-30 | 2003-10-01 |  | 1.5d |  | Business Analysts | 8h |
| 36 | 1.2.2.3 | **Determine usage patterns by role** | 1d | 2003-09-30 | 2003-10-01 | 30 | 1.5d | 0d |  | 32h |
| 37 | 1.2.2.3.1 | Document usage patterns of Project Managers | 1d | 2003-09-30 | 2003-10-01 |  | 1.5d |  | Business Analysts | 8h |
| 38 | 1.2.2.3.2 | Document usage patterns of Team Members | 1d | 2003-09-30 | 2003-10-01 |  | 1.5d |  | Business Analysts | 8h |
| 39 | 1.2.2.3.3 | Document usage patterns of Executives | 1d | 2003-09-30 | 2003-10-01 |  | 1.5d |  | Business Analysts | 8h |
| 40 | 1.2.2.3.4 | Document usage patterns of External Project Managers | 1d | 2003-09-30 | 2003-10-01 |  | 1.5d |  | Business Analysts | 8h |
| 41 | 1.2.2.4 | **Document Server Capacity** | 1d | 2003-10-01 | 2003-10-02 | 36, 31 | 1.5d | 0d |  | 104h |
| 42 | 1.2.2.4.1 | **Determine Bandwidth Requirements** | 1d | 2003-10-01 | 2003-10-02 |  | 1.5d |  |  | 16h |
| 43 | 1.2.2.4.1.1 | Bandwidth requirements for users | 1d | 2003-10-01 | 2003-10-02 |  | 1.5d |  | Network Administrator | 8h |
| 44 | 1.2.2.4.1.2 | Bandwidth requirements for servers | 1d | 2003-10-01 | 2003-10-02 |  | 1.5d |  | Network Administrator | 8h |
| 45 | 1.2.2.4.2 | **Determine Disk Space Requirements** | 1d | 2003-10-01 | 2003-10-02 |  | 1.5d |  |  | 32h |
| 46 | 1.2.2.4.2.1 | Disk space requirements for databases | 1d | 2003-10-01 | 2003-10-02 |  | 1.5d |  | Database Administrator | 8h |
| 47 | 1.2.2.4.2.2 | Disk space requirements for document storage | 1d | 2003-10-01 | 2003-10-02 |  | 1.5d |  | Database Administrator | 8h |
| 48 | 1.2.2.4.2.3 | Disk space requirements for indexes | 1d | 2003-10-01 | 2003-10-02 |  | 1.5d |  | Database Administrator | 8h |
| 49 | 1.2.2.4.2.4 | Disk space requirements for redundancy | 1d | 2003-10-01 | 2003-10-02 |  | 1.5d |  | Database Administrator | 8h |
| 50 | 1.2.2.4.3 | **Determine Server Requirements** | 0.5d | 2003-10-01 | 2003-10-01 |  | 2d |  |  | 56h |
| 51 | 1.2.2.4.3.1 | Number of servers for application demands | 4h | 2003-10-01 | 2003-10-01 |  | 2d |  | Network Administrator; Systems Architect | 8h |
| 52 | 1.2.2.4.3.2 | Identify servers needed for testing environment | 4h | 2003-10-01 | 2003-10-01 |  | 2d |  | Network Administrator; Systems Architect | 8h |
| 53 | 1.2.2.4.3.3 | Identify servers needed for training environment | 4h | 2003-10-01 | 2003-10-01 |  | 2d |  | Network Administrator; Systems Architect | 8h |
| 54 | 1.2.2.4.3.4 | Determine number of servers for redundancy | 4h | 2003-10-01 | 2003-10-01 |  | 2d |  | Network Administrator; Systems Architect | 8h |
| 55 | 1.2.2.4.3.5 | Determine role of servers | 4h | 2003-10-01 | 2003-10-01 |  | 2d |  | Network Administrator; Systems Architect | 8h |
| 56 | 1.2.2.4.3.6 | Determine memory per server | 4h | 2003-10-01 | 2003-10-01 |  | 2d |  | Network Administrator; Systems Architect | 8h |
| 57 | 1.2.2.4.3.7 | Determine processing power per server | 4h | 2003-10-01 | 2003-10-01 |  | 2d |  | Network Administrator; Systems Architect | 8h |

| ID | WBS | Task | Type | Duration | Start | Finish | Predecessors | Total slack | Free slack | Resources | Work |
| --- | --- | --- | --- | --- | --- | --- | --- | --- | --- | --- | --- |
| 58 | 1.2.2.5 | **Inventory and Plan Desktop Configuration** |  | 1d | 2003-10-01 | 2003-10-02 | 36, 31 | 1.5d | 0d |  | 48h |
| 59 | 1.2.2.5.1 | Inventory desktop hardware |  | 1d | 2003-10-01 | 2003-10-02 |  | 1.5d |  | Desktop Support | 8h |
| 60 | 1.2.2.5.2 | Inventory desktop software |  | 1d | 2003-10-01 | 2003-10-02 |  | 1.5d |  | Desktop Support | 8h |
| 61 | 1.2.2.5.3 | Identify user profiles and customizations |  | 1d | 2003-10-01 | 2003-10-02 |  | 1.5d |  | Network Administrator; Desktop Support | 16h |
| 62 | 1.2.2.5.4 | Identify files for distribution |  | 1d | 2003-10-01 | 2003-10-02 |  | 1.5d |  | Desktop Support | 8h |
| 63 | 1.2.2.5.5 | Identify multilingual requirements |  | 1d | 2003-10-01 | 2003-10-02 |  | 1.5d |  | Desktop Support | 8h |
| 64 | 1.2.2.6 | Perform capacity planning complete | milestone | 0d | 2003-10-02 | 2003-10-02 | 31, 36, 41, 58 | 1.5d |  |  |  |
| 65 | 1.2.3 | **Evaluate Migration Requirements** |  | 3.5d | 2003-09-29 | 2003-10-02 | 11 | 1d |  |  | 104h |
| 66 | 1.2.3.1 | **Identify Coexistence Issues** |  | 1d | 2003-09-29 | 2003-09-30 |  | 3.5d | 2.5d |  | 24h |
| 67 | 1.2.3.1.1 | Identify coexistence issues with other enterprise applications |  | 1d | 2003-09-29 | 2003-09-30 |  | 3.5d |  | Desktop Support | 8h |
| 68 | 1.2.3.1.2 | Determine if earlier versions of Microsoft Project will coexist |  | 1d | 2003-09-29 | 2003-09-30 |  | 3.5d |  | Business Analysts | 8h |
| 69 | 1.2.3.1.3 | Determine strategy for managing coexistence issues |  | 4h | 2003-09-29 | 2003-09-29 |  | 4d |  | Business Analysts; Systems Architect | 8h |
| 70 | 1.2.3.2 | **Identify Migration Strategies** |  | 3.5d | 2003-09-29 | 2003-10-02 |  | 1d | 0d |  | 80h |
| 71 | 1.2.3.2.1 | Identify projects for conversion/import |  | 1d | 2003-09-29 | 2003-09-30 |  | 3.5d |  | Project Managers | 8h |
| 72 | 1.2.3.2.2 | Identify strategy for projects not being imported/converted |  | 1d | 2003-09-29 | 2003-09-30 |  | 2.5d | 1.5d | Project Managers | 8h |
| 73 | 1.2.3.2.3 | Identify macros for migration |  | 4h | 2003-09-29 | 2003-09-29 |  | 1d | 0d | Project Managers; Application Developers | 8h |
| 74 | 1.2.3.2.4 | Identify templates for migration |  | 1d | 2003-09-30 | 2003-09-30 | 73 | 1d | 0d | Project Managers | 8h |
| 75 | 1.2.3.2.5 | Identify custom integrated applications for migration |  | 1d | 2003-10-01 | 2003-10-01 | 74 | 1d | 0d | Project Managers; Application Developers | 16h |
| 76 | 1.2.3.2.6 | Identify custom Project Guides for migration |  | 1d | 2003-10-02 | 2003-10-02 | 72, 75 | 1d |  | Project Managers; Application Developers | 16h |
| 77 | 1.2.3.2.7 | Review database migration tool for upgrading from Microsoft Project Server 2002 |  | 1d | 2003-09-29 | 2003-09-30 |  | 3.5d |  | Database Administrator | 8h |
| 78 | 1.2.3.2.8 | Review migration tool for upgrading from Microsoft SharePoint Team Services |  | 1d | 2003-09-29 | 2003-09-30 |  | 3.5d |  | Systems Architect | 8h |
| 79 | 1.2.3.3 | Evaluate migration requirements complete | milestone | 0d | 2003-10-02 | 2003-10-02 | 66, 70 | 1d |  |  |  |
| 80 | 1.2.4 | **Plan Systems Integration** |  | 1d | 2003-09-29 | 2003-09-30 | 11 | 3.5d |  |  | 40h |
| 81 | 1.2.4.1 | **Identify Systems with Information Needed in EPM Environment** |  | 1d | 2003-09-29 | 2003-09-30 |  | 3.5d | 0d |  | 40h |
| 82 | 1.2.4.1.1 | Evaluate HR and resource pools |  | 1d | 2003-09-29 | 2003-09-30 |  | 3.5d |  | Systems Architect | 8h |
| 83 | 1.2.4.1.2 | Evaluate cost tracking systems |  | 1d | 2003-09-29 | 2003-09-30 |  | 3.5d |  | Systems Architect | 8h |
| 84 | 1.2.4.1.3 | Evaluate other enterprise reporting systems |  | 1d | 2003-09-29 | 2003-09-30 |  | 3.5d |  | Systems Architect | 8h |
| 85 | 1.2.4.1.4 | Evaluate time and labor systems |  | 1d | 2003-09-29 | 2003-09-30 |  | 3.5d |  | Systems Architect | 8h |
| 86 | 1.2.4.1.5 | Evaluate other line of business systems |  | 1d | 2003-09-29 | 2003-09-30 |  | 3.5d |  | Systems Architect | 8h |
| 87 | 1.2.4.2 | Plan systems integration complete | milestone | 0d | 2003-09-30 | 2003-09-30 | 81 | 3.5d |  |  |  |

| ID | WBS | Task | Type | Duration | Start | Finish | Predecessors | Total slack | Free slack | Resources | Work |
| --- | --- | --- | --- | --- | --- | --- | --- | --- | --- | --- | --- |
| 88 | 1.2.5 | **Plan Infrastructure** |  | 4.5d | 2003-09-29 | 2003-10-03 | 11 | 0d |  |  | 432h |
| 89 | 1.2.5.1 | **Evaluate and Upgrade Network** |  | 3.5d | 2003-09-29 | 2003-10-02 |  | 0d |  |  | 112h |
| 90 | 1.2.5.1.1 | **Identify Existing Connections** |  | 1d | 2003-09-29 | 2003-09-30 |  | 0d |  |  | 48h |
| 91 | 1.2.5.1.1.1 | Diagram/Document LAN connections |  | 1d | 2003-09-29 | 2003-09-30 |  | 0d |  | Network Administrator; Systems Architect | 16h |
| 92 | 1.2.5.1.1.2 | Diagram/Document WAN connections |  | 1d | 2003-09-29 | 2003-09-30 |  | 0d |  | Network Administrator; Systems Architect | 16h |
| 93 | 1.2.5.1.1.3 | Evaluate external user connections |  | 1d | 2003-09-29 | 2003-09-30 |  | 0d |  | Network Administrator; Systems Architect | 16h |
| 94 | 1.2.5.1.2 | **Handle Upgrades** |  | 2.5d | 2003-09-30 | 2003-10-02 | 90 | 0d |  |  | 64h |
| 95 | 1.2.5.1.2.1 | Increase bandwidth as needed |  | 12h | 2003-09-30 | 2003-10-01 |  | 1d |  | Network Administrator; Systems Architect | 24h |
| 96 | 1.2.5.1.2.2 | Configure a VPN solution as needed |  | 20h | 2003-09-30 | 2003-10-02 |  | 0d |  | Network Administrator; Systems Architect | 40h |
| 97 | 1.2.5.2 | **Evaluate and Upgrade Hardware** |  | 1.5d | 2003-09-29 | 2003-09-30 |  | 2d |  |  | 24h |
| 98 | 1.2.5.2.1 | Identify hardware for each project service |  | 4h | 2003-09-29 | 2003-09-29 |  | 2d | 0d | Server Administrator; Systems Architect | 8h |
| 99 | 1.2.5.2.2 | Identify hardware vendor |  | 4h | 2003-09-30 | 2003-09-30 | 98 | 2d | 0d | Server Administrator; Systems Architect | 8h |
| 100 | 1.2.5.2.3 | Order hardware |  | 4h | 2003-09-30 | 2003-09-30 | 99 | 2d |  | Server Administrator; Systems Architect | 8h |
| 101 | 1.2.5.3 | **Evaluate Software** |  | 1d | 2003-09-29 | 2003-09-30 |  | 2.5d |  |  | 96h |
| 102 | 1.2.5.3.1 | Evaluate Microsoft Windows 2000 Server/Microsoft Windows Server 2003 |  | 1d | 2003-09-29 | 2003-09-30 |  | 2.5d |  | Server Administrator; Systems Architect | 16h |
| 103 | 1.2.5.3.2 | Evaluate Microsoft Internet Information Server |  | 1d | 2003-09-29 | 2003-09-30 |  | 2.5d |  | Server Administrator; Systems Architect | 16h |
| 104 | 1.2.5.3.3 | Evaluate Microsoft SQL Server |  | 1d | 2003-09-29 | 2003-09-30 |  | 2.5d |  | Server Administrator; Systems Architect | 16h |
| 105 | 1.2.5.3.4 | Evaluate Microsoft SQL Analysis Services |  | 1d | 2003-09-29 | 2003-09-30 |  | 2.5d |  | Server Administrator; Systems Architect | 16h |
| 106 | 1.2.5.3.5 | Evaluate Microsoft Windows SharePoint Services |  | 1d | 2003-09-29 | 2003-09-30 |  | 2.5d |  | Server Administrator; Systems Architect | 16h |
| 107 | 1.2.5.3.6 | Evaluate Microsoft SharePoint Portal Server "v2.0" |  | 1d | 2003-09-29 | 2003-09-30 |  | 2.5d |  | Server Administrator; Systems Architect | 16h |
| 108 | 1.2.5.4 | **Document Infrastructure** |  | 1d | 2003-10-03 | 2003-10-03 | 101, 97, 89 | 0d |  |  | 200h |
| 109 | 1.2.5.4.1 | Create physical implementation diagram. Include: SQL Server, Analysis Services, Microsoft Office Project Server 2003, Windows SharePoint Services, Microsoft SharePoint Portal Server "v2.0", Views Notification Services, and Session State Server |  | 1d | 2003-10-03 | 2003-10-03 |  | 0d |  | Network Administrator | 8h |
| 110 | 1.2.5.4.2 | **Create Model Configuration Definitions** |  | 1d | 2003-10-03 | 2003-10-03 |  | 0d |  |  | 192h |
| 111 | 1.2.5.4.2.1 | Create Microsoft Internet Explorer definition |  | 1d | 2003-10-03 | 2003-10-03 |  | 0d |  | Network Administrator; Server Administrator; Desktop Support | 24h |
| 112 | 1.2.5.4.2.2 | Create Project Server 2003 definition |  | 1d | 2003-10-03 | 2003-10-03 |  | 0d |  | Database Administrator; Network Administrator; Server Administrator; Systems Architect | 32h |
| 113 | 1.2.5.4.2.3 | Create SQL Server definition |  | 1d | 2003-10-03 | 2003-10-03 |  | 0d |  | Database Administrator; Network Administrator; Server Administrator; Systems Architect | 32h |
| 114 | 1.2.5.4.2.4 | Create SQL Server Analysis Services definition |  | 1d | 2003-10-03 | 2003-10-03 |  | 0d |  | Database Administrator; Network Administrator; Server Administrator; Systems Architect | 32h |
| 115 | 1.2.5.4.2.5 | Create IIS definition |  | 1d | 2003-10-03 | 2003-10-03 |  | 0d |  | Network Administrator; Server Administrator; Systems Architect | 24h |
| 116 | 1.2.5.4.2.6 | Create Windows SharePoint Services definition |  | 1d | 2003-10-03 | 2003-10-03 |  | 0d |  | Network Administrator; Server Administrator; Systems Architect | 24h |
| 117 | 1.2.5.4.2.7 | Create Microsoft SharePoint Portal Server "v2.0" definition |  | 1d | 2003-10-03 | 2003-10-03 |  | 0d |  | Network Administrator; Server Administrator; Systems Architect | 24h |
| 118 | 1.2.5.5 | Plan infrastructure complete | milestone | 0d | 2003-10-03 | 2003-10-03 | 108 | 0d |  |  |  |

| ID | WBS | Task | Type | Duration | Start | Finish | Predecessors | Total slack | Free slack | Resources | Work |
| --- | --- | --- | --- | --- | --- | --- | --- | --- | --- | --- | --- |
| 119 | 1.2.6 | **Define Security** |  | 1d | 2003-09-29 | 2003-09-30 | 11 | 3.5d |  |  | 88h |
| 120 | 1.2.6.1 | Consider use of SSL to access SharePoint technologies and Project Server |  | 1d | 2003-09-29 | 2003-09-30 |  | 3.5d | 0d | Network Administrator; Systems Architect | 16h |
| 121 | 1.2.6.2 | **Define and Document Network Service Accounts** |  | 1d | 2003-09-29 | 2003-09-30 |  | 3.5d | 0d |  | 32h |
| 122 | 1.2.6.2.1 | Set up SQL Server service account |  | 1d | 2003-09-29 | 2003-09-30 |  | 3.5d |  | Network Administrator | 8h |
| 123 | 1.2.6.2.2 | Set up Project Server COM+ package accounts |  | 1d | 2003-09-29 | 2003-09-30 |  | 3.5d |  | Network Administrator | 8h |
| 124 | 1.2.6.2.3 | Configure Windows SharePoint Services service accounts |  | 1d | 2003-09-29 | 2003-09-30 |  | 3.5d |  | Network Administrator | 8h |
| 125 | 1.2.6.2.4 | Configure Microsoft SharePoint Portal Server "v2.0" service accounts |  | 1d | 2003-09-29 | 2003-09-30 |  | 3.5d |  | Network Administrator | 8h |
| 126 | 1.2.6.3 | **Define Project Server Security Scheme** |  | 1d | 2003-09-29 | 2003-09-30 |  | 3.5d | 0d |  | 40h |
| 127 | 1.2.6.3.1 | Document groups |  | 1d | 2003-09-29 | 2003-09-30 |  | 3.5d |  | Project Managers | 8h |
| 128 | 1.2.6.3.2 | Document categories |  | 1d | 2003-09-29 | 2003-09-30 |  | 3.5d |  | Project Managers | 8h |
| 129 | 1.2.6.3.3 | Document security templates |  | 1d | 2003-09-29 | 2003-09-30 |  | 3.5d |  | Project Managers | 8h |
| 130 | 1.2.6.3.4 | Determine group membership |  | 1d | 2003-09-29 | 2003-09-30 |  | 3.5d |  | Project Managers | 8h |
| 131 | 1.2.6.3.5 | Determine authentication method |  | 1d | 2003-09-29 | 2003-09-30 |  | 3.5d |  | Project Managers | 8h |
| 132 | 1.2.6.4 | Define security complete | milestone | 0d | 2003-09-30 | 2003-09-30 | 120, 121, 126 | 3.5d |  |  |  |
| 133 | 1.2.7 | **Define Internationalization Requirements** |  | 1d | 2003-09-29 | 2003-09-30 | 11 | 3.5d |  |  | 16h |
| 134 | 1.2.7.1 | Review currency requirements |  | 1d | 2003-09-29 | 2003-09-30 |  | 3.5d | 0d | Business Analysts | 8h |
| 135 | 1.2.7.2 | Review language requirements |  | 1d | 2003-09-29 | 2003-09-30 |  | 3.5d | 0d | Business Analysts | 8h |
| 136 | 1.2.7.3 | Define internationalization requirements complete | milestone | 0d | 2003-09-30 | 2003-09-30 | 134, 135 | 3.5d |  |  |  |
| 137 | 1.2.8 | Planning complete | milestone | 0d | 2003-10-03 | 2003-10-03 | 126, 119, 133, 29, 65, 80, 88 | 0d |  |  |  |
| 138 | 1.3 | **Deployment** |  | 79.75d | 2003-10-06 | 2004-01-23 | 10 | 0d |  |  | 1660h |
| 139 | 1.3.1 | **Deploy Pilot** |  | 20d | 2003-10-06 | 2003-10-31 |  | 0d |  |  | 694h |
| 140 | 1.3.1.1 | **Install Servers** |  | 17d | 2003-10-06 | 2003-10-28 |  | 3d |  |  | 412h |
| 141 | 1.3.1.1.1 | Install hardware |  | 4d | 2003-10-06 | 2003-10-09 |  | 3d | 0d | Server Administrator | 32h |
| 142 | 1.3.1.1.2 | **Install Software** |  | 4d | 2003-10-10 | 2003-10-15 | 141 | 3d | 0d |  | 102h |
| 143 | 1.3.1.1.2.1 | Install operating system(s) |  | 4d | 2003-10-10 | 2003-10-15 |  | 3d |  | Server Administrator | 32h |
| 144 | 1.3.1.1.2.2 | Install appropriate operating system patches |  | 1d | 2003-10-10 | 2003-10-10 |  | 6d |  | Server Administrator | 8h |

| ID | WBS | Task | Duration | Start | Finish | Predecessors | Total slack | Free slack | Resources | Work |
| --- | --- | --- | --- | --- | --- | --- | --- | --- | --- | --- |
| 145 | 1.3.1.1.2.3 | **Install and configure SQL Server** | 1d | 2003-10-10 | 2003-10-10 |  | 5d | 0d |  | 14h |
| 146 | 1.3.1.1.2.3.1 | Install SQL Server | 4h | 2003-10-10 | 2003-10-10 |  | 5d | 0d | Database Administrator | 4h |
| 147 | 1.3.1.1.2.3.2 | Create Project Server database(s) (run data definition scripts or use installation tool) | 2h | 2003-10-10 | 2003-10-10 | 146 | 5d | 0d | Database Administrator | 2h |
| 148 | 1.3.1.1.2.3.3 | Create additional Project Server databases for additional Project Server instances | 2h | 2003-10-10 | 2003-10-10 | 147 | 5d |  | Database Administrator | 2h |
| 149 | 1.3.1.1.2.3.4 | Create Project Server service user accounts | 2h | 2003-10-10 | 2003-10-10 |  | 5.75d |  | Network Administrator | 2h |
| 150 | 1.3.1.1.2.3.5 | Install SQL Server Analysis Services | 4h | 2003-10-10 | 2003-10-10 |  | 5.5d |  | Database Administrator | 4h |
| 151 | 1.3.1.1.2.4 | Install Windows SharePoint Services | 1d | 2003-10-10 | 2003-10-10 |  | 5d | 0d | Server Administrator | 8h |
| 152 | 1.3.1.1.2.5 | Install Microsoft SharePoint Portal Server "v2.0" | 1d | 2003-10-10 | 2003-10-10 |  | 6d |  | Server Administrator | 8h |
| 153 | 1.3.1.1.2.6 | **Install Project Server(s)** | 1d | 2003-10-13 | 2003-10-13 | 145, 151 | 5d |  |  | 16h |
| 154 | 1.3.1.1.2.6.1 | Install application server(s) | 1d | 2003-10-13 | 2003-10-13 |  | 5d |  | Server Administrator | 8h |
| 155 | 1.3.1.1.2.6.2 | Install Project Server (or Project Server cluster) | 1d | 2003-10-13 | 2003-10-13 |  | 5d |  | Server Administrator | 8h |
| 156 | 1.3.1.1.2.7 | Install Terminal Services | 1d | 2003-10-10 | 2003-10-10 |  | 6d |  | Server Administrator | 8h |
| 157 | 1.3.1.1.2.8 | Install appropriate application patches | 1d | 2003-10-10 | 2003-10-10 |  | 6d |  | Server Administrator | 8h |
| 158 | 1.3.1.1.3 | **Configure Software** | 7.5d | 2003-10-16 | 2003-10-27 | 142 | 3d |  |  | 222h |
| 159 | 1.3.1.1.3.1 | **Configure Project Server** | 7.5d | 2003-10-16 | 2003-10-27 |  | 3d | 0d |  | 222h |
| 160 | 1.3.1.1.3.1.1 | Configure Microsoft Project Server subwebs | 2h | 2003-10-16 | 2003-10-16 |  | 3d | 0d | Server Administrator | 2h |
| 161 | 1.3.1.1.3.1.2 | Implement EPM Enterprise Implementation Framework outputs in enterprise global template | 2d | 2003-10-16 | 2003-10-20 | 160 | 3d | 0d | Business Analysts | 16h |
| 162 | 1.3.1.1.3.1.3 | Map resources and users to Windows user accounts | 1d | 2003-10-20 | 2003-10-21 | 161 | 7.25d |  | Network Administrator | 8h |
| 163 | 1.3.1.1.3.1.4 | Implement resources in enterprise resource pool | 1d | 2003-10-20 | 2003-10-21 | 161 | 7.25d |  | Network Administrator | 8h |
| 164 | 1.3.1.1.3.1.5 | Implement security schema in Project Server | 4h | 2003-10-20 | 2003-10-20 | 161 | 7.75d |  | Business Analysts | 4h |
| 165 | 1.3.1.1.3.1.6 | Implement Project Center views in Microsoft Office Project Web Access 2003 | 1d | 2003-10-20 | 2003-10-21 | 161 | 7.25d |  | Project Managers | 8h |
| 166 | 1.3.1.1.3.1.7 | Implement Project views in Microsoft Office Project Web Access 2003 | 1d | 2003-10-20 | 2003-10-21 | 161 | 7.25d |  | Project Managers | 8h |
| 167 | 1.3.1.1.3.1.8 | Implement Resource Center views in Microsoft Office Project Web Access 2003 | 1d | 2003-10-20 | 2003-10-21 | 161 | 7.25d |  | Project Managers | 8h |
| 168 | 1.3.1.1.3.1.9 | Implement Assignment views in Microsoft Office Project Web Access 2003 | 1d | 2003-10-20 | 2003-10-21 | 161 | 7.25d |  | Project Managers | 8h |
| 169 | 1.3.1.1.3.1.10 | Implement Portfolio Analyzer views in Microsoft Office Project Web Access 2003 | 4h | 2003-10-20 | 2003-10-20 | 161 | 7.75d |  | Project Managers; Application Developers | 8h |
| 170 | 1.3.1.1.3.1.11 | Create models in Microsoft Office Project Web Access 2003 | 4h | 2003-10-20 | 2003-10-20 | 161 | 7.75d |  | Project Managers | 4h |
| 171 | 1.3.1.1.3.1.12 | Obtain and configure SMTP server information | 2h | 2003-10-16 | 2003-10-16 | 160 | 4.75d | 1.75d | Network Administrator | 2h |
| 172 | 1.3.1.1.3.1.13 | Implement notifications and reminders in Project Server | 2h | 2003-10-20 | 2003-10-20 | 171, 161 | 3d | 0d | Business Analysts | 2h |

| ID | WBS | Task | Duration | Start | Finish | Predecessors | Total slack | Free slack | Resources | Work |
| --- | --- | --- | --- | --- | --- | --- | --- | --- | --- | --- |
| 173 | 1.3.1.1.3.1.14 | **Execute Migration Plan** | 5d | 2003-10-20 | 2003-10-27 | 172 | 3d |  |  | 136h |
| 174 | 1.3.1.1.3.1.14.1 | Migrate resources | 2d | 2003-10-20 | 2003-10-22 |  | 6d |  | Project Managers | 16h |
| 175 | 1.3.1.1.3.1.14.2 | Migrate project plans | 2d | 2003-10-20 | 2003-10-22 |  | 6d |  | Project Managers | 16h |
| 176 | 1.3.1.1.3.1.14.3 | Migrate templates | 1d | 2003-10-20 | 2003-10-21 |  | 7d |  | Project Managers | 8h |
| 177 | 1.3.1.1.3.1.14.4 | Migrate databases | 2d | 2003-10-20 | 2003-10-22 |  | 6d |  | Project Managers | 16h |
| 178 | 1.3.1.1.3.1.14.5 | Migrate macros | 5d | 2003-10-20 | 2003-10-27 |  | 3d |  | Application Developers | 40h |
| 179 | 1.3.1.1.3.1.14.6 | Migrate custom Project Guides | 5d | 2003-10-20 | 2003-10-27 |  | 3d |  | Application Developers | 40h |
| 180 | 1.3.1.1.4 | **Configure Microsoft SharePoint Portal Server "v2.0"** | 0.5d | 2003-10-27 | 2003-10-27 | 159 | 3d | 0d |  | 12h |
| 181 | 1.3.1.1.4.1 | Set up Microsoft SharePoint Portal Server "v2.0" connection in Microsoft Office Project Web Access 2003 | 4h | 2003-10-27 | 2003-10-27 |  | 3d |  | Server Administrator | 4h |
| 182 | 1.3.1.1.4.2 | Configure Microsoft SharePoint Portal Server "v2.0" indexing | 4h | 2003-10-27 | 2003-10-27 |  | 3d |  | Server Administrator | 4h |
| 183 | 1.3.1.1.4.3 | Connect existing team sites to the portal | 4h | 2003-10-27 | 2003-10-27 |  | 3d |  | Server Administrator | 4h |
| 184 | 1.3.1.1.5 | **Configure Windows SharePoint Services** | 1d | 2003-10-28 | 2003-10-28 | 180 | 3d |  |  | 28h |
| 185 | 1.3.1.1.5.1 | Validate PSCOMPlus settings | 2h | 2003-10-28 | 2003-10-28 |  | 3.75d |  | Server Administrator | 2h |
| 186 | 1.3.1.1.5.2 | Configure proxy server | 2h | 2003-10-28 | 2003-10-28 |  | 3.75d |  | Network Administrator | 2h |
| 187 | 1.3.1.1.5.3 | Configure SharePoint connection settings and site creation settings | 1d | 2003-10-28 | 2003-10-28 |  | 3d |  | Server Administrator | 8h |
| 188 | 1.3.1.1.5.4 | Configure Windows SharePoint Services site templates | 1d | 2003-10-28 | 2003-10-28 |  | 3d |  | Server Administrator | 8h |
| 189 | 1.3.1.1.5.5 | Configure cross-web security | 1d | 2003-10-28 | 2003-10-28 |  | 3d |  | Server Administrator | 8h |
| 190 | 1.3.1.1.6 | **Configure Analysis Services** | 1d | 2003-10-27 | 2003-10-28 | 159 | 3.5d |  |  | 16h |
| 191 | 1.3.1.1.6.1 | Assign cube roles and permissions | 1d | 2003-10-27 | 2003-10-28 |  | 3.5d |  | Database Administrator | 8h |
| 192 | 1.3.1.1.6.2 | Validate PSCOMPlus OLAP identity | 1d | 2003-10-27 | 2003-10-28 |  | 3.5d |  | Network Administrator | 8h |
| 193 | 1.3.1.2 | **Perform Desktop Deployment** | 5d | 2003-10-06 | 2003-10-10 |  | 0d |  |  | 120h |
| 194 | 1.3.1.2.1 | **Perform Scripted Deployment** | 2d | 2003-10-06 | 2003-10-07 |  | 3d |  |  | 20h |
| 195 | 1.3.1.2.1.1 | Create deployment script | 2d | 2003-10-06 | 2003-10-07 |  | 3d |  | Desktop Support | 16h |
| 196 | 1.3.1.2.1.2 | Schedule running of deployment script | 4h | 2003-10-06 | 2003-10-06 |  | 4.5d |  | Desktop Support | 4h |
| 197 | 1.3.1.2.2 | Deploy Terminal Services Client | 20h | 2003-10-06 | 2003-10-08 |  | 2.5d |  | Desktop Support | 20h |

Notes:
- 197: Using Terminal Services Client will improve performance if you have project managers connecting to your Project Server over a WAN.

| ID | WBS | Task | Type | Duration | Start | Finish | Predecessors | Total slack | Resources | Work |
| --- | --- | --- | --- | --- | --- | --- | --- | --- | --- | --- |
| 198 | 1.3.1.2.3 | **Perform Manual Deployment** |  | 3d | 2003-10-06 | 2003-10-08 |  | 2d |  | 28h |
| 199 | 1.3.1.2.3.1 | Develop specifications and documentation for running Setup |  | 3d | 2003-10-06 | 2003-10-08 |  | 2d | Desktop Support | 24h |
| 200 | 1.3.1.2.3.2 | Provide location to run Setup |  | 4h | 2003-10-06 | 2003-10-06 |  | 4.5d | Network Administrator | 4h |
| 201 | 1.3.1.2.4 | **Configure Internet Explorer** |  | 0.5d | 2003-10-06 | 2003-10-06 |  | 4.5d |  | 12h |
| 202 | 1.3.1.2.4.1 | Configure trusted sites |  | 4h | 2003-10-06 | 2003-10-06 |  | 4.5d | Desktop Support | 4h |
| 203 | 1.3.1.2.4.2 | Configure automatic download of ActiveX in trusted sites zone |  | 4h | 2003-10-06 | 2003-10-06 |  | 4.5d | Desktop Support | 4h |
| 204 | 1.3.1.2.4.3 | Allow cookies |  | 4h | 2003-10-06 | 2003-10-06 |  | 4.5d | Desktop Support | 4h |
| 205 | 1.3.1.2.5 | Install the Microsoft Office System on desktop as desired/needed |  | 5d | 2003-10-06 | 2003-10-10 |  | 0d | Desktop Support | 40h |
| 206 | 1.3.1.3 | Implement pilot versions of planned system integrations |  | 10d | 2003-10-13 | 2003-10-24 | 193 | 0d | Application Developers | 80h |
| 207 | 1.3.1.4 | **Test the Pilot Deployment** |  | 5d | 2003-10-27 | 2003-10-31 | 206 | 0d |  | 82h |
| 208 | 1.3.1.4.1 | Test system function |  | 3d | 2003-10-27 | 2003-10-29 |  | 2d | Project Managers | 24h |
| 209 | 1.3.1.4.2 | **Resolve issues** |  | 5d | 2003-10-27 | 2003-10-31 |  | 0d |  | 50h |
| 210 | 1.3.1.4.2.1 | Resolve connectivity problems |  | 5d | 2003-10-27 | 2003-10-31 |  | 0d | Network Administrator [25%] | 10h |
| 211 | 1.3.1.4.2.2 | Resolve installation problems |  | 5d | 2003-10-27 | 2003-10-31 |  | 0d | Database Administrator [25%]; Server Administrator [25%]; Systems Architect [25%]; Desktop Support [25%] | 40h |
| 212 | 1.3.1.4.3 | Scrub test data |  | 1d | 2003-10-27 | 2003-10-27 |  | 4d | Database Administrator | 8h |
| 213 | 1.3.1.5 | Deploy pilot complete | milestone | 0d | 2003-10-31 | 2003-10-31 | 140, 193, 207 | 0d |  |  |
| 214 | 1.3.2 | Compare pilot results to success criteria |  | 5d | 2003-11-03 | 2003-11-07 | 139 | 0d | Business Analysts; Project Managers; Team Members | 120h |
| 215 | 1.3.3 | Production deployment approved | milestone | 0d | 2003-11-07 | 2003-11-07 | 214 | 0d |  |  |
| 216 | 1.3.4 | **Deploy Production System** |  | 50.75d | 2003-11-10 | 2004-01-19 | 215 | 0d |  | 798h |
| 217 | 1.3.4.1 | **Install Servers** |  | 14.75d | 2003-11-10 | 2003-11-28 |  | 0d |  | 412h |
| 218 | 1.3.4.1.1 | Install hardware |  | 4d | 2003-11-10 | 2003-11-13 |  | 0d | Server Administrator | 32h |
| 219 | 1.3.4.1.2 | **Install Software** |  | 4d | 2003-11-14 | 2003-11-19 | 218 | 0d |  | 102h |
| 220 | 1.3.4.1.2.1 | Install operating system(s) |  | 4d | 2003-11-14 | 2003-11-19 |  | 0d | Server Administrator | 32h |
| 221 | 1.3.4.1.2.2 | Install appropriate operating system patches |  | 1d | 2003-11-14 | 2003-11-14 |  | 3d | Server Administrator | 8h |

| ID | WBS | Task | Duration | Start | Finish | Predecessors | Total slack | Free slack | Resources | Work |
| --- | --- | --- | --- | --- | --- | --- | --- | --- | --- | --- |
| 222 | 1.3.4.1.2.3 | **Install and Configure SQL Server** | 1d | 2003-11-14 | 2003-11-14 |  | 2d | 0d |  | 14h |
| 223 | 1.3.4.1.2.3.1 | Install SQL Server | 4h | 2003-11-14 | 2003-11-14 |  | 2d | 0d | Database Administrator | 4h |
| 224 | 1.3.4.1.2.3.2 | Create Project Server database(s) (run data definition scripts or use installation tool) | 2h | 2003-11-14 | 2003-11-14 | 223 | 2d | 0d | Database Administrator | 2h |
| 225 | 1.3.4.1.2.3.3 | Create additional Project Server databases for additional Project Server instances | 2h | 2003-11-14 | 2003-11-14 | 224 | 2d |  | Database Administrator | 2h |
| 226 | 1.3.4.1.2.3.4 | Create Project Server service user accounts | 2h | 2003-11-14 | 2003-11-14 |  | 2.75d |  | Network Administrator | 2h |
| 227 | 1.3.4.1.2.3.5 | Install SQL Server Analysis Services | 4h | 2003-11-14 | 2003-11-14 |  | 2.5d |  | Database Administrator | 4h |
| 228 | 1.3.4.1.2.4 | Install Windows SharePoint Services | 1d | 2003-11-14 | 2003-11-14 |  | 2d | 0d | Server Administrator | 8h |
| 229 | 1.3.4.1.2.5 | Install Microsoft SharePoint Portal Server "v2.0" | 1d | 2003-11-14 | 2003-11-14 |  | 3d |  | Server Administrator | 8h |
| 230 | 1.3.4.1.2.6 | **Install Project Server(s)** | 1d | 2003-11-17 | 2003-11-17 | 222, 228 | 2d |  |  | 16h |
| 231 | 1.3.4.1.2.6.1 | Install application server(s) | 1d | 2003-11-17 | 2003-11-17 |  | 2d |  | Server Administrator | 8h |
| 232 | 1.3.4.1.2.6.2 | Install Project Server (or Project Server cluster) | 1d | 2003-11-17 | 2003-11-17 |  | 2d |  | Server Administrator | 8h |
| 233 | 1.3.4.1.2.7 | Install Terminal Services | 1d | 2003-11-14 | 2003-11-14 |  | 3d |  | Server Administrator | 8h |
| 234 | 1.3.4.1.2.8 | Install appropriate application patches | 1d | 2003-11-14 | 2003-11-14 |  | 3d |  | Server Administrator | 8h |
| 235 | 1.3.4.1.3 | **Configure Software** | 6.75d | 2003-11-20 | 2003-11-28 | 219 | 0d |  |  | 278h |
| 236 | 1.3.4.1.3.1 | **Configure Project Server** | 5.75d | 2003-11-20 | 2003-11-27 |  | 0d |  |  | 222h |
| 237 | 1.3.4.1.3.1.1 | Configure Project Server subwebs | 2h | 2003-11-20 | 2003-11-20 |  | 0d |  | Server Administrator | 2h |
| 238 | 1.3.4.1.3.1.2 | Implement EPM Enterprise Implementation Framework outputs in enterprise global template | 2d | 2003-11-20 | 2003-11-24 | 237 | 2.5d | 0d | Business Analysts | 16h |
| 239 | 1.3.4.1.3.1.3 | Map resources and users to Windows user accounts | 1d | 2003-11-24 | 2003-11-25 | 238 | 2.5d |  | Network Administrator | 8h |
| 240 | 1.3.4.1.3.1.4 | Implement resources in enterprise resource pool | 1d | 2003-11-20 | 2003-11-21 | 237 | 4.5d |  | Network Administrator | 8h |
| 241 | 1.3.4.1.3.1.5 | Implement security schema in Project Server | 4h | 2003-11-20 | 2003-11-20 | 237 | 5d |  | Business Analysts | 4h |
| 242 | 1.3.4.1.3.1.6 | Implement Project Center views in Microsoft Office Project Web Access 2003 | 1d | 2003-11-20 | 2003-11-21 | 237 | 4.5d |  | Project Managers | 8h |
| 243 | 1.3.4.1.3.1.7 | Implement Project views in Microsoft Office Project Web Access 2003 | 1d | 2003-11-20 | 2003-11-21 | 237 | 4.5d |  | Project Managers | 8h |
| 244 | 1.3.4.1.3.1.8 | Implement Resource Center views in Microsoft Office Project Web Access 2003 | 4h | 2003-11-20 | 2003-11-20 | 237 | 5d |  | Project Managers; Application Developers | 8h |
| 245 | 1.3.4.1.3.1.9 | Implement Assignment views in Microsoft Office Project Web Access 2003 | 1d | 2003-11-20 | 2003-11-20 |  | 4.75d |  | Project Managers | 8h |
| 246 | 1.3.4.1.3.1.10 | Implement Portfolio Analyzer views in Microsoft Office Project Web Access 2003 | 1d | 2003-11-20 | 2003-11-20 |  | 4.75d |  | Project Managers | 8h |
| 247 | 1.3.4.1.3.1.11 | Create models in Microsoft Office Project Web Access 2003 | 4h | 2003-11-20 | 2003-11-20 | 237 | 5d |  | Project Managers | 4h |
| 248 | 1.3.4.1.3.1.12 | Obtain and configure SMTP server information | 2h | 2003-11-20 | 2003-11-20 | 237 | 0d |  | Network Administrator | 2h |
| 249 | 1.3.4.1.3.1.13 | Implement notifications and reminders in Project Server | 2h | 2003-11-20 | 2003-11-20 | 248 | 0d |  | Business Analysts | 2h |

| ID | WBS | Task | Duration | Start | Finish | Predecessors | Total slack | Resources | Work |
| --- | --- | --- | --- | --- | --- | --- | --- | --- | --- |
| 250 | 1.3.4.1.3.1.14 | **Execute Migration Plan** | 5d | 2003-11-20 | 2003-11-27 | 249 | 0d |  | 136h |
| 251 | 1.3.4.1.3.1.14.1 | Migrate resources | 2d | 2003-11-20 | 2003-11-24 |  | 3d | Project Managers | 16h |
| 252 | 1.3.4.1.3.1.14.2 | Migrate project plans | 2d | 2003-11-20 | 2003-11-24 |  | 3d | Project Managers | 16h |
| 253 | 1.3.4.1.3.1.14.3 | Migrate templates | 1d | 2003-11-20 | 2003-11-21 |  | 4d | Project Managers | 8h |
| 254 | 1.3.4.1.3.1.14.4 | Migrate databases | 2d | 2003-11-20 | 2003-11-24 |  | 3d | Project Managers | 16h |
| 255 | 1.3.4.1.3.1.14.5 | Migrate macros | 5d | 2003-11-20 | 2003-11-27 |  | 0d | Application Developers | 40h |
| 256 | 1.3.4.1.3.1.14.6 | Migrate custom Project Guides | 5d | 2003-11-20 | 2003-11-27 |  | 0d | Application Developers | 40h |
| 257 | 1.3.4.1.3.2 | **Configure Microsoft SharePoint Portal Server "v2.0"** | 0.5d | 2003-11-27 | 2003-11-28 | 236 | 0.5d |  | 12h |
| 258 | 1.3.4.1.3.2.1 | Set up Microsoft SharePoint Portal Server "v2.0" connection in Microsoft Office Project Web Access 2003 | 4h | 2003-11-27 | 2003-11-28 |  | 0.5d | Server Administrator | 4h |
| 259 | 1.3.4.1.3.2.2 | Configure Microsoft SharePoint Portal Server "v2.0" indexing | 4h | 2003-11-27 | 2003-11-28 |  | 0.5d | Server Administrator | 4h |
| 260 | 1.3.4.1.3.2.3 | Connect existing team sites to the portal | 4h | 2003-11-27 | 2003-11-28 |  | 0.5d | Server Administrator | 4h |
| 261 | 1.3.4.1.3.3 | **Configure Windows SharePoint Services** | 1d | 2003-11-27 | 2003-11-28 | 236 | 0d |  | 28h |
| 262 | 1.3.4.1.3.3.1 | Validate PSCOMPlus settings | 2h | 2003-11-27 | 2003-11-27 |  | 0.75d | Server Administrator | 2h |
| 263 | 1.3.4.1.3.3.2 | Configure proxy server | 2h | 2003-11-27 | 2003-11-27 |  | 0.75d | Network Administrator | 2h |
| 264 | 1.3.4.1.3.3.3 | Configure SharePoint connection settings and site creation settings | 1d | 2003-11-27 | 2003-11-28 |  | 0d | Server Administrator | 8h |
| 265 | 1.3.4.1.3.3.4 | Configure Windows SharePoint Services site templates | 1d | 2003-11-27 | 2003-11-28 |  | 0d | Server Administrator | 8h |
| 266 | 1.3.4.1.3.3.5 | Configure cross-web security | 1d | 2003-11-27 | 2003-11-28 |  | 0d | Server Administrator | 8h |
| 267 | 1.3.4.1.3.4 | **Configure Analysis Services** | 1d | 2003-11-27 | 2003-11-28 | 236 | 0d |  | 16h |
| 268 | 1.3.4.1.3.4.1 | Assign cube roles and permissions | 1d | 2003-11-27 | 2003-11-28 |  | 0d | Database Administrator | 8h |
| 269 | 1.3.4.1.3.4.2 | Validate PSCOMPlus OLAP identity | 1d | 2003-11-27 | 2003-11-28 |  | 0d | Network Administrator | 8h |
| 270 | 1.3.4.2 | **Perform Desktop Deployment** | 5d | 2003-11-28 | 2003-12-05 | 217 | 0d |  | 120h |
| 271 | 1.3.4.2.1 | **Perform Scripted Deployment** | 2d | 2003-11-28 | 2003-12-02 |  | 3d |  | 20h |
| 272 | 1.3.4.2.1.1 | Create deployment script | 2d | 2003-11-28 | 2003-12-02 |  | 3d | Desktop Support | 16h |
| 273 | 1.3.4.2.1.2 | Schedule running of deployment script | 4h | 2003-11-28 | 2003-12-01 |  | 4.5d | Desktop Support | 4h |
| 274 | 1.3.4.2.2 | Deploy Terminal Services Client | 20h | 2003-11-28 | 2003-12-03 |  | 2.5d | Desktop Support | 20h |

Notes:
- 274: Using Terminal Services Client will improve performance if you have project managers connecting to your Project Server over a WAN.

| ID | WBS | Task | Type | Duration | Start | Finish | Predecessors | Total slack | Free slack | Resources | Work |
| --- | --- | --- | --- | --- | --- | --- | --- | --- | --- | --- | --- |
| 275 | 1.3.4.2.3 | **Perform Manual Deployment** |  | 3d | 2003-11-28 | 2003-12-03 |  | 2d |  |  | 28h |
| 276 | 1.3.4.2.3.1 | Develop specifications and documentation for running Setup |  | 3d | 2003-11-28 | 2003-12-03 |  | 2d |  | Desktop Support | 24h |
| 277 | 1.3.4.2.3.2 | Provide location to run Setup |  | 4h | 2003-11-28 | 2003-12-01 |  | 4.5d |  | Network Administrator | 4h |
| 278 | 1.3.4.2.4 | **Configure Internet Explorer** |  | 0.5d | 2003-11-28 | 2003-12-01 |  | 4.5d |  |  | 12h |
| 279 | 1.3.4.2.4.1 | Configure trusted sites |  | 4h | 2003-11-28 | 2003-12-01 |  | 4.5d |  | Desktop Support | 4h |
| 280 | 1.3.4.2.4.2 | Configure automatic download of ActiveX in trusted sites zone |  | 4h | 2003-11-28 | 2003-12-01 |  | 4.5d |  | Desktop Support | 4h |
| 281 | 1.3.4.2.4.3 | Allow cookies |  | 4h | 2003-11-28 | 2003-12-01 |  | 4.5d |  | Desktop Support | 4h |
| 282 | 1.3.4.2.5 | Install the Microsoft Office System on desktop as desired/needed |  | 5d | 2003-11-28 | 2003-12-05 |  | 0d |  | Desktop Support | 40h |
| 283 | 1.3.4.3 | Implement production versions of planned system integrations |  | 30d | 2003-12-05 | 2004-01-16 | 270 | 0d |  | Application Developers | 240h |
| 284 | 1.3.4.4 | **Test the Production Deployment** |  | 1d | 2004-01-16 | 2004-01-19 | 283 | 0d |  |  | 26h |
| 285 | 1.3.4.4.1 | Test system function |  | 1d | 2004-01-16 | 2004-01-19 |  | 0d |  | Project Managers | 8h |
| 286 | 1.3.4.4.2 | **Resolve issues** |  | 1d | 2004-01-16 | 2004-01-19 |  | 0d |  |  | 10h |
| 287 | 1.3.4.4.2.1 | Resolve connectivity problems |  | 1d | 2004-01-16 | 2004-01-19 |  | 0d |  | Network Administrator [25%] | 2h |
| 288 | 1.3.4.4.2.2 | Resolve installation problems |  | 1d | 2004-01-16 | 2004-01-19 |  | 0d |  | Database Administrator [25%]; Server Administrator [25%]; Systems Architect [25%]; Desktop Support [25%] | 8h |
| 289 | 1.3.4.4.3 | Scrub test data |  | 1d | 2004-01-16 | 2004-01-19 |  | 0d |  | Database Administrator | 8h |
| 290 | 1.3.4.5 | Deploy production system complete | milestone | 0d | 2004-01-19 | 2004-01-19 | 284 | 0d |  | Business Analysts; Project Managers; Team Members |  |
| 291 | 1.3.5 | **Migrate Pilot Data to Production** |  | 4d | 2004-01-19 | 2004-01-23 | 216 | 0d |  |  | 48h |
| 292 | 1.3.5.1 | Migrate pilot databases |  | 1d | 2004-01-19 | 2004-01-20 |  | 0d |  | Database Administrator | 8h |
| 293 | 1.3.5.2 | Migrate Windows SharePoint Services information |  | 2d | 2004-01-20 | 2004-01-22 | 292 | 0d |  | Database Administrator; Server Administrator | 32h |
| 294 | 1.3.5.3 | Migrate or rebuild OLAP cubes |  | 4h | 2004-01-22 | 2004-01-23 | 293 | 0d |  | Database Administrator | 4h |
| 295 | 1.3.5.4 | Migrate Portfolio Analyzer views |  | 4h | 2004-01-23 | 2004-01-23 | 294 | 0d |  | Database Administrator | 4h |
| 296 | 1.3.5.5 | Migrate pilot data to production complete | milestone | 0d | 2004-01-23 | 2004-01-23 | 295 | 0d |  |  |  |
| 297 | 1.3.6 | Deployment complete | milestone | 0d | 2004-01-23 | 2004-01-23 | 216, 291 | 0d |  |  |  |
| 298 | 1.4 | **Post-deployment** |  | 30d | 2004-01-23 | 2004-03-05 | 138 | 0d |  |  | 274.4h |
| 299 | 1.4.1 | **Implement and Test Backup** |  | 1.25d | 2004-01-23 | 2004-01-26 |  | 28.75d |  |  | 40h |
| 300 | 1.4.1.1 | Implement backup strategy for Project Server |  | 4h | 2004-01-23 | 2004-01-26 |  | 28.75d | 0d | Database Administrator; Server Administrator | 8h |
| 301 | 1.4.1.2 | Implement backup strategy for Windows SharePoint Services |  | 4h | 2004-01-23 | 2004-01-26 |  | 28.75d | 0d | Database Administrator; Server Administrator | 8h |
| 302 | 1.4.1.3 | Test Project Server backup strategy |  | 4h | 2004-01-26 | 2004-01-26 | 300 | 28.75d | 0d | Database Administrator; Server Administrator | 8h |
| 303 | 1.4.1.4 | Test Windows SharePoint Services backup strategy |  | 4h | 2004-01-26 | 2004-01-26 | 301 | 28.75d | 0d | Database Administrator; Server Administrator | 8h |
| 304 | 1.4.1.5 | Implement and test disaster planning and recovery strategy |  | 2h | 2004-01-26 | 2004-01-26 | 302, 303 | 28.75d | 0d | Database Administrator; Network Administrator; Server Administrator; Systems Architect | 8h |
| 305 | 1.4.1.6 | Implement and test backup complete | milestone | 0d | 2004-01-26 | 2004-01-26 | 304 | 28.75d |  |  |  |

| ID | WBS | Task | Type | Duration | Start | Finish | Predecessors | Total slack | Free slack | Resources | Work |
| --- | --- | --- | --- | --- | --- | --- | --- | --- | --- | --- | --- |
| 306 | 1.4.2 | **Implement Performance Tuning and Monitoring** |  | 30d | 2004-01-23 | 2004-03-05 |  | 0d |  |  | 115.2h |
| 307 | 1.4.2.1 | Observe performance parameters using performance monitor |  | 30d | 2004-01-23 | 2004-03-05 |  | 0d |  | Database Administrator [6%]; Server Administrator [6%] | 28.8h |
| 308 | 1.4.2.2 | Compare performance to plan |  | 30d | 2004-01-23 | 2004-03-05 |  | 0d |  | Database Administrator [6%]; Server Administrator [6%] | 28.8h |
| 309 | 1.4.2.3 | Tweak settings as needed |  | 30d | 2004-01-23 | 2004-03-05 |  | 0d |  | Database Administrator [6%]; Server Administrator [6%] | 28.8h |
| 310 | 1.4.2.4 | Re-forecast demand and plan appropriately |  | 30d | 2004-01-23 | 2004-03-05 |  | 0d |  | Database Administrator [6%]; Server Administrator [6%] | 28.8h |
| 311 | 1.4.2.5 | Implement performance tuning and monitoring complete | milestone | 0d | 2004-03-05 | 2004-03-05 | 307, 308, 309, 310 | 0d |  |  |  |
| 312 | 1.4.3 | **Set up System Maintenance** |  | 30d | 2004-01-23 | 2004-03-05 |  | 0d |  |  | 23.2h |
| 313 | 1.4.3.1 | Create SQL Server maintenance plans |  | 4h | 2004-01-23 | 2004-01-26 |  | 29.5d |  | Database Administrator | 4h |
| 314 | 1.4.3.2 | Administer user accounts |  | 30d | 2004-01-23 | 2004-03-05 |  | 0d |  | Database Administrator [4%] | 9.6h |
| 315 | 1.4.3.3 | Monitor log and data files |  | 30d | 2004-01-23 | 2004-03-05 |  | 0d |  | Database Administrator [4%] | 9.6h |
| 316 | 1.4.3.4 | Set up system maintenance complete | milestone | 0d | 2004-03-05 | 2004-03-05 | 313, 314, 315 | 0d |  |  |  |
| 317 | 1.4.4 | Obtain user feedback |  | 1d | 2004-01-23 | 2004-01-26 |  | 24d | 0d | Business Analysts; Project Managers; Team Members | 24h |
| 318 | 1.4.5 | Evaluate lessons learned |  | 1d | 2004-01-26 | 2004-01-27 | 317 | 24d | 0d | Business Analysts; Project Managers; Team Members | 24h |
| 319 | 1.4.6 | Modify items as necessary |  | 3d | 2004-01-27 | 2004-01-30 | 318 | 24d | 0d | Business Analysts | 24h |
| 320 | 1.4.7 | Establish on-going Microsoft Project users team |  | 1d | 2004-01-30 | 2004-02-02 | 319 | 24d |  | Business Analysts; Project Managers; Team Members | 24h |
| 321 | 1.4.8 | Post-deployment complete | milestone | 0d | 2004-03-05 | 2004-03-05 | 319, 312, 306, 299 | 0d |  |  |  |
| 322 | 1.5 | Microsoft Project 2003 deployment complete | milestone | 0d | 2004-03-05 | 2004-03-05 | 298 | 0d |  |  |  |
