# Microsoft Windows SharePoint Services Deployment

Schedule from MS Project, 2003-09-15 to 2004-04-27.

## Calendars

- Standard: Mon-Fri 08:00-12:00, 13:00-17:00; Sat-Sun off.

## Resources

| Resource |
| --- |
| Database Administrator |
| Network Administrator |
| Project Manager |
| IT Support Staff |
| Server Administrator |
| Systems Architect |
| Desktop Support |
| Application Deployment |
| Team Members |
| Stakeholders |
| Test/QA |
| Project Managers |
| User Education/Training |

## Schedule

| ID | WBS | Task | Type | Duration | Start | Finish | Predecessors | Total slack | Resources | Work |
| --- | --- | --- | --- | --- | --- | --- | --- | --- | --- | --- |
| 1 | 1 | **Microsoft Windows SharePoint Services Deployment** |  | 161.5d | 2003-09-15 | 2004-04-27 |  | 0d |  | 3158.4h |
| 2 | 1.1 | **Envisioning** |  | 10d | 2003-09-15 | 2003-09-26 |  | 0d |  | 80h |
| 3 | 1.1.1 | Summarize current team collaboration environment |  | 2d | 2003-09-15 | 2003-09-16 |  | 0d | Stakeholders | 16h |
| 4 | 1.1.2 | Identify team collaboration vision concerns (multinational, etc.) |  | 2d | 2003-09-17 | 2003-09-18 | 3 | 0d | Stakeholders | 16h |
| 5 | 1.1.3 | Determine project scope (early adopters, departmental deployment, etc.) |  | 3d | 2003-09-19 | 2003-09-23 | 4 | 0d | Stakeholders | 24h |
| 6 | 1.1.4 | Determine major milestones |  | 1d | 2003-09-24 | 2003-09-24 | 5 | 0d | Stakeholders | 8h |
| 7 | 1.1.5 | Secure executive sponsorship |  | 2d | 2003-09-25 | 2003-09-26 | 6 | 0d | Stakeholders | 16h |
| 8 | 1.1.6 | Envisioning complete | milestone | 0d | 2003-09-26 | 2003-09-26 | 7 | 0d |  |  |
| 9 | 1.2 | **Planning** |  | 30.5d | 2003-09-29 | 2003-11-10 | 2 | 0d |  | 1460h |
| 10 | 1.2.1 | **Assemble Project Teams/Define Roles** |  | 0.5d | 2003-09-29 | 2003-09-29 |  | 0d |  | 84h |
| 11 | 1.2.1.1 | Identify project manager |  | 4h | 2003-09-29 | 2003-09-29 |  | 0d | Stakeholders | 4h |
| 12 | 1.2.1.2 | Identify database administrator |  | 4h | 2003-09-29 | 2003-09-29 |  | 0d | Project Manager; Stakeholders | 8h |
| 13 | 1.2.1.3 | Identify network administratorFDSD |  | 4h | 2003-09-29 | 2003-09-29 |  | 0d | Project Manager; Stakeholders | 8h |
| 14 | 1.2.1.4 | Identify IT support staff |  | 4h | 2003-09-29 | 2003-09-29 |  | 0d | Project Manager; Stakeholders | 8h |
| 15 | 1.2.1.5 | Identify server administrator |  | 4h | 2003-09-29 | 2003-09-29 |  | 0d | Project Manager; Stakeholders | 8h |
| 16 | 1.2.1.6 | Identify systems architect |  | 4h | 2003-09-29 | 2003-09-29 |  | 0d | Project Manager; Stakeholders | 8h |
| 17 | 1.2.1.7 | Identify desktop support lead |  | 4h | 2003-09-29 | 2003-09-29 |  | 0d | Project Manager; Stakeholders | 8h |
| 18 | 1.2.1.8 | Identify application deployment team |  | 4h | 2003-09-29 | 2003-09-29 |  | 0d | Project Manager; Stakeholders | 8h |
| 19 | 1.2.1.9 | Identify team members |  | 4h | 2003-09-29 | 2003-09-29 |  | 0d | Project Manager; Stakeholders | 8h |
| 20 | 1.2.1.10 | Identify test/QA lead |  | 4h | 2003-09-29 | 2003-09-29 |  | 0d | Project Manager; Stakeholders | 8h |
| 21 | 1.2.1.11 | Identify user education/training lead |  | 4h | 2003-09-29 | 2003-09-29 |  | 0d | Project Manager; Stakeholders | 8h |
| 22 | 1.2.1.12 | Assemble project teams/define roles complete | milestone | 0d | 2003-09-29 | 2003-09-29 | 11, 12, 13, 14, 15, 16, 17, 18, 19, 20, 21 | 0d |  |  |
| 23 | 1.2.2 | **Plan Software Configuration** |  | 8d | 2003-09-29 | 2003-10-09 | 10 | 0d |  | 112h |
| 24 | 1.2.2.1 | Identify design objectives |  | 4d | 2003-09-29 | 2003-10-03 |  | 0d | Project Manager; Systems Architect | 64h |
| 25 | 1.2.2.2 | Complete implementation risk assessment |  | 2d | 2003-10-03 | 2003-10-07 | 24 | 0d | Project Manager | 16h |
| 26 | 1.2.2.3 | Determine Windows SharePoint Services components to install to meet goals |  | 2d | 2003-10-07 | 2003-10-09 | 25 | 0d | Project Manager; Team Members | 32h |
| 27 | 1.2.2.4 | Plan software configuration complete | milestone | 0d | 2003-10-09 | 2003-10-09 | 26 | 0d |  |  |

Notes:
- 1: This template is designed to help you identify and execute the tasks necessary to successfully deploy Windows SharePoint Services and migrate from Microsofts SharePoint Team Services. Use resources available from http://www.microsoft.com/SharePoint to assist with the details of this effort. In addition, you can leverage resources available in other templates including the Microsoft Office SharePoint Portal Server "v2.0" Deployment template, the Microsoft Windows 2003 Server deployment template, and the Microsoft Office System Deployment template. / See Help to learn more about each section of this template.

| ID | WBS | Task | Type | Duration | Start | Finish | Predecessors | Total slack | Free slack | Resources | Work |
| --- | --- | --- | --- | --- | --- | --- | --- | --- | --- | --- | --- |
| 28 | 1.2.3 | **Perform Capacity Planning** |  | 9d | 2003-10-09 | 2003-10-22 | 23 | 0d |  |  | 152h |
| 29 | 1.2.3.1 | **Identify Roles of Users** |  | 1d | 2003-10-09 | 2003-10-10 |  | 0d |  |  | 32h |
| 30 | 1.2.3.1.1 | Identify readers |  | 1d | 2003-10-09 | 2003-10-10 |  | 0d |  | Team Members | 8h |
| 31 | 1.2.3.1.2 | Identify contributors |  | 1d | 2003-10-09 | 2003-10-10 |  | 0d |  | Team Members | 8h |
| 32 | 1.2.3.1.3 | Identify Web designers |  | 1d | 2003-10-09 | 2003-10-10 |  | 0d |  | Team Members | 8h |
| 33 | 1.2.3.1.4 | Identify custom roles |  | 1d | 2003-10-09 | 2003-10-10 |  | 0d |  | Team Members | 8h |
| 34 | 1.2.3.2 | Determine number of users in each role |  | 1d | 2003-10-10 | 2003-10-13 | 29 | 0d |  | Team Members | 8h |
| 35 | 1.2.3.3 | Determine usage patterns by role |  | 1d | 2003-10-10 | 2003-10-13 | 29 | 0d |  | Team Members | 8h |
| 36 | 1.2.3.4 | **Determine Required Server Capacity from Role Analysis** |  | 7d | 2003-10-13 | 2003-10-22 | 29, 34, 35 | 0d |  |  | 104h |
| 37 | 1.2.3.4.1 | Determine architecture for servers (e.g. single box or Web farm, single database server or clustering, etc.) |  | 3d | 2003-10-13 | 2003-10-16 |  | 0d |  | Systems Architect | 24h |
| 38 | 1.2.3.4.2 | Develop architectural diagram |  | 2d | 2003-10-16 | 2003-10-20 | 37 | 0d |  | Systems Architect | 16h |
| 39 | 1.2.3.4.3 | Size Web servers |  | 1d | 2003-10-20 | 2003-10-21 | 38 | 0d |  | Network Administrator; Systems Architect | 16h |
| 40 | 1.2.3.4.4 | Size database servers |  | 1d | 2003-10-20 | 2003-10-21 | 38 | 0d |  | Database Administrator; Systems Architect | 16h |
| 41 | 1.2.3.4.5 | Determine quantity of Web servers |  | 1d | 2003-10-21 | 2003-10-22 | 39 | 0d |  | Network Administrator; Systems Architect | 16h |
| 42 | 1.2.3.4.6 | Determine quantity of database servers |  | 1d | 2003-10-21 | 2003-10-22 | 40 | 0d |  | Database Administrator; Systems Architect | 16h |
| 43 | 1.2.3.5 | Perform capacity planning complete | milestone | 0d | 2003-10-22 | 2003-10-22 | 36 | 0d |  |  |  |
| 44 | 1.2.4 | **Define Training Strategy** |  | 22d | 2003-10-09 | 2003-11-10 | 23 | 0d |  |  | 176h |
| 45 | 1.2.4.1 | Determine users to be trained |  | 2d | 2003-10-09 | 2003-10-13 |  | 0d |  | User Education/Training | 16h |
| 46 | 1.2.4.2 | Develop training documentation |  | 10d | 2003-10-13 | 2003-10-27 | 45 | 0d |  | User Education/Training | 80h |
| 47 | 1.2.4.3 | Train pilot team |  | 10d | 2003-10-27 | 2003-11-10 | 46 | 0d |  | User Education/Training | 80h |
| 48 | 1.2.4.4 | Define training strategy complete | milestone | 0d | 2003-11-10 | 2003-11-10 | 47 | 0d |  |  |  |
| 49 | 1.2.5 | **Plan Upgrade** |  | 12d | 2003-10-09 | 2003-10-27 | 23 | 10d |  |  | 184h |
| 50 | 1.2.5.1 | **Identify Coexistence Strategies** |  | 4d | 2003-10-09 | 2003-10-15 |  | 10d | 8d |  | 48h |
| 51 | 1.2.5.1.1 | Identify interoperability issues with applications (SharePoint technologies versions, Microsoft Office System program versions, suites, etc.) |  | 2d | 2003-10-09 | 2003-10-13 |  | 20d |  | Systems Architect | 16h |
| 52 | 1.2.5.1.2 | Identify interoperability issues with the organization's partners (SharePoint technologies versions, Microsoft Office System program versions, suites, etc.) |  | 2d | 2003-10-09 | 2003-10-13 |  | 10d | 0d | Systems Architect | 16h |
| 53 | 1.2.5.1.3 | Identify interoperability issues with third-party packages |  | 2d | 2003-10-13 | 2003-10-15 | 52 | 10d | 0d | Systems Architect | 16h |
| 54 | 1.2.5.1.4 | Identify coexistence strategies complete | milestone | 0d | 2003-10-15 | 2003-10-15 | 53 | 10d | 0d |  |  |

| ID | WBS | Task | Type | Duration | Start | Finish | Predecessors | Total slack | Free slack | Resources | Work |
| --- | --- | --- | --- | --- | --- | --- | --- | --- | --- | --- | --- |
| 55 | 1.2.5.2 | **Identify Migration Strategies (If Currently Using SharePoint Team Services)** |  | 8d | 2003-10-15 | 2003-10-27 |  | 10d | 0d |  | 136h |
| 56 | 1.2.5.2.1 | Develop document migration strategy for SharePoint Team Services |  | 3d | 2003-10-15 | 2003-10-20 | 54 | 10d | 0d | Systems Architect | 24h |
| 57 | 1.2.5.2.2 | Identify SharePoint Team Services subwebs for proactive document migration (mass conversion) |  | 5d | 2003-10-20 | 2003-10-27 | 56 | 10d |  | Systems Architect; Team Members | 80h |
| 58 | 1.2.5.2.3 | Identify SharePoint Team Services subwebs for "as-used" migration (requires SharePoint Team Services remains on separate servers) |  | 1d | 2003-10-20 | 2003-10-21 | 56 | 14d |  | Systems Architect; Team Members | 16h |
| 59 | 1.2.5.2.4 | Identify SharePoint Team Services subwebs not being migrated |  | 1d | 2003-10-20 | 2003-10-21 | 56 | 14d |  | Systems Architect; Team Members | 16h |
| 60 | 1.2.5.3 | Plan upgrade complete | milestone | 0d | 2003-10-27 | 2003-10-27 | 50, 55 | 10d |  |  |  |
| 61 | 1.2.6 | **Define Infrastructure** |  | 17d | 2003-10-09 | 2003-11-03 | 23 | 0d |  |  | 472h |
| 62 | 1.2.6.1 | **Evaluate and Upgrade Network** |  | 11.5d | 2003-10-09 | 2003-10-24 |  | 5.5d |  |  | 112h |
| 63 | 1.2.6.1.1 | **Identify Existing Network** |  | 1d | 2003-10-09 | 2003-10-10 |  | 8d |  |  | 48h |
| 64 | 1.2.6.1.1.1 | Diagram and document LAN connections |  | 1d | 2003-10-09 | 2003-10-10 |  | 8d |  | Database Administrator; Network Administrator | 16h |
| 65 | 1.2.6.1.1.2 | Diagram and document WAN connections |  | 1d | 2003-10-09 | 2003-10-10 |  | 8d |  | Database Administrator; Network Administrator | 16h |
| 66 | 1.2.6.1.1.3 | Diagram and document external user connections |  | 1d | 2003-10-09 | 2003-10-10 |  | 8d |  | Database Administrator; Network Administrator | 16h |
| 67 | 1.2.6.1.2 | **Handle Network Upgrades** |  | 2.5d | 2003-10-22 | 2003-10-24 | 63, 28 | 5.5d |  |  | 64h |
| 68 | 1.2.6.1.2.1 | Add additional bandwidth as required |  | 12h | 2003-10-22 | 2003-10-23 |  | 6.5d |  | Database Administrator; Network Administrator | 24h |
| 69 | 1.2.6.1.2.2 | Configure a VPN solution as needed |  | 20h | 2003-10-22 | 2003-10-24 |  | 5.5d |  | Database Administrator; Network Administrator | 40h |
| 70 | 1.2.6.2 | **Document Hardware** |  | 8d | 2003-10-22 | 2003-11-03 | 63, 28 | 0d |  |  | 296h |
| 71 | 1.2.6.2.1 | **Identify Server Environment** |  | 2d | 2003-10-22 | 2003-10-24 |  | 6d |  |  | 64h |
| 72 | 1.2.6.2.1.1 | **Identify Server Operating Systems** |  | 1d | 2003-10-22 | 2003-10-23 |  | 7d |  |  | 24h |
| 73 | 1.2.6.2.1.1.1 | Identify legacy Windows servers |  | 1d | 2003-10-22 | 2003-10-23 |  | 7d |  | Systems Architect | 8h |
| 74 | 1.2.6.2.1.1.2 | Identify Microsoft Windows Server 2003 servers |  | 1d | 2003-10-22 | 2003-10-23 |  | 7d |  | Systems Architect | 8h |
| 75 | 1.2.6.2.1.1.3 | Plan upgrade to Windows Server 2003 as required (you may want to use the Windows 2003 Server Deployment template to help) |  | 1d | 2003-10-22 | 2003-10-23 |  | 7d |  | Systems Architect | 8h |
| 76 | 1.2.6.2.1.2 | **Identify Server Hardware** |  | 2d | 2003-10-22 | 2003-10-24 |  | 6d |  |  | 40h |
| 77 | 1.2.6.2.1.2.1 | Identify Web servers for Windows SharePoint Services |  | 1d | 2003-10-22 | 2003-10-23 |  | 6d | 0d | Network Administrator; Systems Architect | 16h |
| 78 | 1.2.6.2.1.2.2 | Identify database servers for Windows SharePoint Services |  | 1d | 2003-10-22 | 2003-10-23 |  | 6d | 0d | Database Administrator; Systems Architect | 16h |
| 79 | 1.2.6.2.1.2.3 | Purchase additional servers as needed |  | 1d | 2003-10-23 | 2003-10-24 | 77, 78 | 6d |  | Systems Architect | 8h |

| ID | WBS | Task | Type | Duration | Start | Finish | Predecessors | Total slack | Free slack | Resources | Work |
| --- | --- | --- | --- | --- | --- | --- | --- | --- | --- | --- | --- |
| 80 | 1.2.6.2.2 | **Document Clients** |  | 8d | 2003-10-22 | 2003-11-03 |  | 0d |  |  | 232h |
| 81 | 1.2.6.2.2.1 | **Identify Operating Systems** |  | 1d | 2003-10-22 | 2003-10-23 |  | 7d |  |  | 32h |
| 82 | 1.2.6.2.2.1.1 | Identify users of Microsoft Windows 95/98 |  | 1d | 2003-10-22 | 2003-10-23 |  | 7d |  | Desktop Support | 8h |
| 83 | 1.2.6.2.2.1.2 | Identify users of Microsoft Windows NT, Microsoft Windows 2000, Microsoft Windows XP |  | 1d | 2003-10-22 | 2003-10-23 |  | 7d |  | Desktop Support | 8h |
| 84 | 1.2.6.2.2.1.3 | Identify users of non-Windows clients |  | 1d | 2003-10-22 | 2003-10-23 |  | 7d |  | Desktop Support | 8h |
| 85 | 1.2.6.2.2.1.4 | Identify users of non-PC clients |  | 1d | 2003-10-22 | 2003-10-23 |  | 7d |  | Desktop Support | 8h |
| 86 | 1.2.6.2.2.2 | **Identify Browsers in Use** |  | 8d | 2003-10-22 | 2003-11-03 |  | 0d |  |  | 112h |
| 87 | 1.2.6.2.2.2.1 | Identify users of Netscape |  | 1d | 2003-10-22 | 2003-10-23 |  | 2d |  | Desktop Support | 8h |
| 88 | 1.2.6.2.2.2.2 | Identify users of Internet Explorer 6.X |  | 1d | 2003-10-22 | 2003-10-23 |  | 2d |  | Desktop Support | 8h |
| 89 | 1.2.6.2.2.2.3 | Identify users of Internet Explorer 5.X |  | 1d | 2003-10-22 | 2003-10-23 |  | 2d |  | Desktop Support | 8h |
| 90 | 1.2.6.2.2.2.4 | Document work-arounds and procedures for users of older versions of Web browsers |  | 3d | 2003-10-22 | 2003-10-27 |  | 0d |  | Systems Architect; Team Members | 48h |
| 91 | 1.2.6.2.2.2.5 | Determine browser upgrade strategy as needed |  | 5d | 2003-10-27 | 2003-11-03 | 87, 88, 89, 90 | 0d |  | Desktop Support | 40h |
| 92 | 1.2.6.2.2.3 | **Identify Microsoft Office System Versions in Use** |  | 6d | 2003-10-22 | 2003-10-30 |  | 2d |  |  | 88h |
| 93 | 1.2.6.2.2.3.1 | Identify users without Microsoft Office System |  | 1d | 2003-10-22 | 2003-10-23 |  | 2d | 0d | Desktop Support | 8h |
| 94 | 1.2.6.2.2.3.2 | Identify users of Microsoft Office System |  | 1d | 2003-10-22 | 2003-10-23 |  | 2d | 0d | Desktop Support | 8h |
| 95 | 1.2.6.2.2.3.3 | Identify users of Microsoft Office XP |  | 1d | 2003-10-22 | 2003-10-23 |  | 2d | 0d | Desktop Support | 8h |
| 96 | 1.2.6.2.2.3.4 | Identify users of Microsoft Office 2000 |  | 1d | 2003-10-22 | 2003-10-23 |  | 2d | 0d | Desktop Support | 8h |
| 97 | 1.2.6.2.2.3.5 | Document work-arounds and procedures for users of older versions of Microsoft Office System |  | 1d | 2003-10-22 | 2003-10-23 |  | 2d | 0d | Systems Architect; Team Members | 16h |
| 98 | 1.2.6.2.2.3.6 | Determine Microsoft Office upgrade strategy as needed (if performing a Microsoft Office System upgrade refer to the Microsoft Office System Deployment template for more information) |  | 5d | 2003-10-23 | 2003-10-30 | 93, 94, 95, 96, 97 | 2d |  | Desktop Support | 40h |
| 99 | 1.2.6.3 | **Evaluate Messaging Infrastructure** |  | 3d | 2003-10-22 | 2003-10-27 | 36 | 5d |  |  | 24h |
| 100 | 1.2.6.3.1 | Determine SMTP capability |  | 1d | 2003-10-22 | 2003-10-23 |  | 5d | 0d | Network Administrator | 8h |
| 101 | 1.2.6.3.2 | Determine ability to handle increased volume from Windows SharePoint Services notifications |  | 1d | 2003-10-23 | 2003-10-24 | 100 | 5d | 0d | Network Administrator | 8h |
| 102 | 1.2.6.3.3 | Determine message "from account" and configure mailbox appropriately |  | 1d | 2003-10-24 | 2003-10-27 | 101 | 5d |  | Network Administrator | 8h |
| 103 | 1.2.6.4 | Plan integration with Microsoft SharePoint Portal Server "v2.0" as desired (see Microsoft SharePoint Portal Server "v2.0" Deployment template for more information) |  | 5d | 2003-10-09 | 2003-10-16 |  | 12d |  | Systems Architect | 40h |
| 104 | 1.2.6.5 | Define infrastructure complete | milestone | 0d | 2003-11-03 | 2003-11-03 | 62, 70, 99, 103 | 0d |  |  |  |

| ID | WBS | Task | Type | Duration | Start | Finish | Predecessors | Total slack | Free slack | Resources | Work |
| --- | --- | --- | --- | --- | --- | --- | --- | --- | --- | --- | --- |
| 105 | 1.2.7 | **Define Security** |  | 1d | 2003-11-03 | 2003-11-04 | 61 | 4d |  |  | 24h |
| 106 | 1.2.7.1 | Create network service accounts |  | 1d | 2003-11-03 | 2003-11-04 |  | 4d | 0d | Network Administrator | 8h |
| 107 | 1.2.7.2 | Define Windows SharePoint Services roles |  | 1d | 2003-11-03 | 2003-11-04 |  | 4d | 0d | Systems Architect | 8h |
| 108 | 1.2.7.3 | Evaluate the Active Directory account configuration tool for management of users and permissions |  | 1d | 2003-11-03 | 2003-11-04 |  | 4d | 0d | Network Administrator | 8h |
| 109 | 1.2.7.4 | Define security complete | milestone | 0d | 2003-11-04 | 2003-11-04 | 106, 107, 108 | 4d |  |  |  |
| 110 | 1.2.8 | **Identify Localization Considerations** |  | 5d | 2003-11-03 | 2003-11-10 | 61 | 0d |  |  | 144h |
| 111 | 1.2.8.1 | Identify international usage scenarios |  | 3d | 2003-11-03 | 2003-11-06 |  | 2d |  | Project Manager; Team Members | 48h |
| 112 | 1.2.8.2 | Identify plans for providing localized content |  | 5d | 2003-11-03 | 2003-11-10 |  | 0d |  | Project Manager; Team Members | 80h |
| 113 | 1.2.8.3 | Identify language templates to use |  | 2d | 2003-11-03 | 2003-11-05 |  | 3d |  | Server Administrator | 16h |
| 114 | 1.2.8.4 | Identify localization considerations complete | milestone | 0d | 2003-11-10 | 2003-11-10 | 111, 112, 113 | 0d |  |  |  |
| 115 | 1.2.9 | **Plan Maintenance Considerations** |  | 5d | 2003-11-03 | 2003-11-10 | 61 | 0d |  |  | 112h |
| 116 | 1.2.9.1 | **Administrative Tasks** |  | 3d | 2003-11-03 | 2003-11-06 |  | 2d |  |  | 48h |
| 117 | 1.2.9.1.1 | Determine administrative support strategy |  | 1d | 2003-11-03 | 2003-11-04 |  | 2d | 0d | Network Administrator; IT Support Staff | 16h |
| 118 | 1.2.9.1.2 | Identify and train a systems administrator |  | 1d | 2003-11-04 | 2003-11-05 | 117 | 2d | 0d | Network Administrator; IT Support Staff | 16h |
| 119 | 1.2.9.1.3 | Define routine administrative tasks |  | 1d | 2003-11-05 | 2003-11-06 | 118 | 2d |  | Network Administrator; IT Support Staff | 16h |
| 120 | 1.2.9.2 | **Backup** |  | 3d | 2003-11-03 | 2003-11-06 |  | 0d |  |  | 32h |
| 121 | 1.2.9.2.1 | Determine backup frequency |  | 1d | 2003-11-03 | 2003-11-04 |  | 0d |  | Database Administrator; Network Administrator | 16h |
| 122 | 1.2.9.2.2 | Identify backup hardware |  | 1d | 2003-11-04 | 2003-11-05 | 121 | 0d |  | Network Administrator | 8h |
| 123 | 1.2.9.2.3 | Document backup procedures |  | 1d | 2003-11-05 | 2003-11-06 | 122 | 0d |  | Network Administrator | 8h |
| 124 | 1.2.9.3 | **Restore** |  | 2d | 2003-11-06 | 2003-11-10 | 120 | 0d |  |  | 32h |
| 125 | 1.2.9.3.1 | Document restoration/disaster recovery process |  | 1d | 2003-11-06 | 2003-11-07 |  | 0d |  | Database Administrator; Network Administrator | 16h |
| 126 | 1.2.9.3.2 | Test restore of backups |  | 1d | 2003-11-07 | 2003-11-10 | 125 | 0d |  | Database Administrator; Network Administrator | 16h |
| 127 | 1.2.9.4 | Plan maintenance considerations complete | milestone | 0d | 2003-11-10 | 2003-11-10 | 116, 120, 124 | 0d |  |  |  |
| 128 | 1.2.10 | Planning complete | milestone | 0d | 2003-11-10 | 2003-11-10 | 115, 10, 23, 28, 44, 49, 61, 105, 110 | 0d |  |  |  |

| ID | WBS | Task | Duration | Start | Finish | Predecessors | Total slack | Free slack | Resources | Work |
| --- | --- | --- | --- | --- | --- | --- | --- | --- | --- | --- |
| 129 | 1.3 | **Deployment** | 91d | 2003-11-10 | 2004-03-16 | 9 | 0d |  |  | 1360h |
| 130 | 1.3.1 | **Pilot Deployment** | 25.5d | 2003-11-10 | 2003-12-15 |  | 0d |  |  | 520h |
| 131 | 1.3.1.1 | **Deploy Servers** | 25.5d | 2003-11-10 | 2003-12-15 |  | 0d |  |  | 324h |
| 132 | 1.3.1.1.1 | Complete hardware setup | 5d | 2003-11-10 | 2003-11-17 |  | 0d |  | Server Administrator | 40h |
| 133 | 1.3.1.1.2 | **Complete Software Installation** | 20.5d | 2003-11-17 | 2003-12-15 | 132 | 0d |  |  | 284h |
| 134 | 1.3.1.1.2.1 | Install Windows Server 2003 | 2d | 2003-11-17 | 2003-11-19 |  | 0d |  | Server Administrator | 16h |
| 135 | 1.3.1.1.2.2 | Install SQL Servers | 2d | 2003-11-19 | 2003-11-21 | 134 | 0d |  | Database Administrator | 16h |
| 136 | 1.3.1.1.2.3 | Install Web server role in Windows Server 2003 | 1d | 2003-11-21 | 2003-11-24 | 135 | 0d |  | Server Administrator | 8h |
| 137 | 1.3.1.1.2.4 | Install Windows SharePoint Services | 1d | 2003-11-24 | 2003-11-25 | 136 | 0d |  | Server Administrator | 8h |
| 138 | 1.3.1.1.2.5 | **Complete Software Configuration** | 14.5d | 2003-11-25 | 2003-12-15 | 137 | 0d |  |  | 236h |
| 139 | 1.3.1.1.2.5.1 | Create quota templates | 2d | 2003-11-25 | 2003-11-27 |  | 12.5d |  | Server Administrator | 16h |
| 140 | 1.3.1.1.2.5.2 | **Configure Sites and Site Collections** | 6.5d | 2003-11-25 | 2003-12-03 |  | 0d |  |  | 52h |
| 141 | 1.3.1.1.2.5.2.1 | Create virtual directories as needed in Internet Information Server (IIS) | 4h | 2003-11-25 | 2003-11-25 |  | 0d |  | Server Administrator | 4h |
| 142 | 1.3.1.1.2.5.2.2 | Create content databases | 1d | 2003-11-26 | 2003-11-26 | 141 | 0d |  | Database Administrator | 8h |
| 143 | 1.3.1.1.2.5.2.3 | Extend virtual directories | 4h | 2003-11-27 | 2003-11-27 | 142 | 0d |  | Server Administrator | 4h |
| 144 | 1.3.1.1.2.5.2.4 | Configure self-service site creation | 4h | 2003-11-27 | 2003-11-27 | 143 | 0d |  | Server Administrator | 4h |
| 145 | 1.3.1.1.2.5.2.5 | Configure site collection to use confirmation and auto-deletion | 4h | 2003-11-28 | 2003-11-28 | 144 | 7d | 0d | Server Administrator | 4h |
| 146 | 1.3.1.1.2.5.2.6 | Configure user rights for virtual directories | 2d | 2003-11-28 | 2003-12-02 | 145 | 7d | 0d | Server Administrator | 16h |
| 147 | 1.3.1.1.2.5.2.7 | Configure e-mail settings | 4h | 2003-12-02 | 2003-12-02 | 146 | 7d | 0d | Server Administrator | 4h |
| 148 | 1.3.1.1.2.5.2.8 | Create top-level Web sites | 4h | 2003-12-03 | 2003-12-03 | 147 | 7d | 0d | Server Administrator | 4h |
| 149 | 1.3.1.1.2.5.2.9 | Select pertinent quota template | 4h | 2003-12-03 | 2003-12-03 | 148 | 7d |  | Server Administrator | 4h |
| 150 | 1.3.1.1.2.5.3 | **Customize Site Template** | 12d | 2003-11-28 | 2003-12-15 | 144 | 0d |  |  | 96h |
| 151 | 1.3.1.1.2.5.3.1 | Implement custom lists | 2d | 2003-11-28 | 2003-12-01 |  | 0d |  | Team Members | 16h |
| 152 | 1.3.1.1.2.5.3.2 | Implement custom site layout template(s) with Microsoft Office FrontPage 2003 | 5d | 2003-12-02 | 2003-12-08 | 151 | 0d |  | Team Members | 40h |
| 153 | 1.3.1.1.2.5.3.3 | Define document folders | 5d | 2003-12-09 | 2003-12-15 | 152 | 0d |  | Team Members | 40h |
| 154 | 1.3.1.1.2.5.4 | Configure full-text indexing | 1d | 2003-12-04 | 2003-12-04 | 140 | 7d |  | Server Administrator | 8h |
| 155 | 1.3.1.1.2.5.5 | Setup blocked file types | 1d | 2003-12-04 | 2003-12-04 | 140 | 7d |  | Server Administrator | 8h |
| 156 | 1.3.1.1.2.5.6 | Configure usage analysis processing | 1d | 2003-12-04 | 2003-12-04 | 140 | 7d |  | Server Administrator | 8h |
| 157 | 1.3.1.1.2.5.7 | Configure DSP settings | 1d | 2003-12-04 | 2003-12-04 | 140 | 7d |  | Server Administrator | 8h |
| 158 | 1.3.1.1.2.5.8 | Configure Microsoft SharePoint Portal Server "v2.0" integration as desired (See Microsoft SharePoint Portal Server "v2.0" Deployment template for more information) | 5d | 2003-11-25 | 2003-12-02 |  | 9.5d |  | Server Administrator | 40h |

| ID | WBS | Task | Type | Duration | Start | Finish | Predecessors | Total slack | Free slack | Resources | Work |
| --- | --- | --- | --- | --- | --- | --- | --- | --- | --- | --- | --- |
| 159 | 1.3.1.2 | **Configure Windows SharePoint Services Clients** |  | 10d | 2003-11-10 | 2003-11-24 |  | 15.5d |  |  | 120h |
| 160 | 1.3.1.2.1 | Upgrade client operating systems as needed |  | 5d | 2003-11-10 | 2003-11-17 |  | 15.5d | 0d | Application Deployment | 40h |
| 161 | 1.3.1.2.2 | Upgrade client browsers as needed |  | 5d | 2003-11-17 | 2003-11-24 | 160 | 15.5d |  | Application Deployment | 40h |
| 162 | 1.3.1.2.3 | Upgrade client Microsoft Office System versions as desired |  | 5d | 2003-11-17 | 2003-11-24 | 160 | 15.5d |  | Application Deployment | 40h |
| 163 | 1.3.1.3 | **Perform Migration from SharePoint Team Services** |  | 7.5d | 2003-11-10 | 2003-11-19 |  | 18d |  |  | 76h |
| 164 | 1.3.1.3.1 | **Select a Migration Method** |  | 1d | 2003-11-10 | 2003-11-11 |  | 18d | 0d |  | 24h |
| 165 | 1.3.1.3.1.1 | Select full backup and restore approach |  | 1d | 2003-11-10 | 2003-11-11 |  | 18d |  | Systems Architect | 8h |
| 166 | 1.3.1.3.1.2 | Select migration using the site migration tool (simigrate.exe) with two live servers |  | 1d | 2003-11-10 | 2003-11-11 |  | 18d |  | Systems Architect | 8h |
| 167 | 1.3.1.3.1.3 | Consider in-place upgrade of SharePoint Team Services if other options are not acceptable |  | 1d | 2003-11-10 | 2003-11-11 |  | 18d |  | Systems Architect | 8h |
| 168 | 1.3.1.3.2 | Create a blank top-level Web site at the destination with no template applied |  | 4h | 2003-11-11 | 2003-11-11 | 164 | 18d | 0d | Server Administrator | 4h |
| 169 | 1.3.1.3.3 | Ensure settings are correct on the destination site |  | 4h | 2003-11-12 | 2003-11-12 | 168 | 18d | 0d | Server Administrator | 4h |
| 170 | 1.3.1.3.4 | Determine whether or not to preserve security settings |  | 4h | 2003-11-12 | 2003-11-12 | 169 | 18d | 0d | Systems Architect | 4h |
| 171 | 1.3.1.3.5 | Obtain administrative privileges on source and destination sites |  | 1d | 2003-11-13 | 2003-11-13 | 170 | 18d | 0d | Server Administrator | 8h |
| 172 | 1.3.1.3.6 | Execute the migration |  | 2d | 2003-11-14 | 2003-11-17 | 171 | 18d | 0d | Server Administrator | 16h |
| 173 | 1.3.1.3.7 | Compare migrated site to the original (not possible with in-place upgrade) |  | 2d | 2003-11-18 | 2003-11-19 | 172 | 18d |  | Team Members | 16h |
| 174 | 1.3.2 | **Test Pilot Environment** |  | 20d | 2003-12-16 | 2004-01-12 | 130 | 0d |  |  | 160h |
| 175 | 1.3.2.1 | Conduct desktop test scenarios |  | 5d | 2003-12-16 | 2003-12-22 |  | 0d |  | Test/QA | 40h |
| 176 | 1.3.2.2 | Conduct server test scenarios |  | 5d | 2003-12-23 | 2003-12-29 | 175 | 0d |  | Test/QA | 40h |
| 177 | 1.3.2.3 | Conduct third-party application test scenarios |  | 5d | 2003-12-30 | 2004-01-05 | 176 | 0d |  | Test/QA | 40h |
| 178 | 1.3.2.4 | Conduct custom application test scenarios |  | 5d | 2004-01-06 | 2004-01-12 | 177 | 0d |  | Test/QA | 40h |
| 179 | 1.3.3 | Pilot deployment complete | milestone | 0d | 2004-01-12 | 2004-01-12 | 130, 174 | 0d |  |  |  |
| 180 | 1.3.4 | **Production Deployment** |  | 25.5d | 2004-01-13 | 2004-02-17 | 179 | 0d |  |  | 520h |
| 181 | 1.3.4.1 | **Deploy Servers** |  | 25.5d | 2004-01-13 | 2004-02-17 |  | 0d |  |  | 324h |
| 182 | 1.3.4.1.1 | Complete hardware setup |  | 5d | 2004-01-13 | 2004-01-19 |  | 0d |  | Server Administrator | 40h |

| ID | WBS | Task | Duration | Start | Finish | Predecessors | Total slack | Free slack | Resources | Work |
| --- | --- | --- | --- | --- | --- | --- | --- | --- | --- | --- |
| 183 | 1.3.4.1.2 | **Complete Software Installation** | 20.5d | 2004-01-20 | 2004-02-17 | 182 | 0d |  |  | 284h |
| 184 | 1.3.4.1.2.1 | Install Windows Server 2003 | 2d | 2004-01-20 | 2004-01-21 |  | 0d |  | Server Administrator | 16h |
| 185 | 1.3.4.1.2.2 | Install SQL Servers | 2d | 2004-01-22 | 2004-01-23 | 184 | 0d |  | Database Administrator | 16h |
| 186 | 1.3.4.1.2.3 | Install Web server role in Windows Server 2003 | 1d | 2004-01-26 | 2004-01-26 | 185 | 0d |  | Server Administrator | 8h |
| 187 | 1.3.4.1.2.4 | Install Windows SharePoint Services | 1d | 2004-01-27 | 2004-01-27 | 186 | 0d |  | Server Administrator | 8h |
| 188 | 1.3.4.1.2.5 | **Complete Software Configuration** | 14.5d | 2004-01-28 | 2004-02-17 | 187 | 0d |  |  | 236h |
| 189 | 1.3.4.1.2.5.1 | Create quota templates | 2d | 2004-01-28 | 2004-01-29 |  | 12.5d |  | Server Administrator | 16h |
| 190 | 1.3.4.1.2.5.2 | **Configure Sites and Site Collections** | 6.5d | 2004-01-28 | 2004-02-05 |  | 0d |  |  | 52h |
| 191 | 1.3.4.1.2.5.2.1 | Create virtual directories as needed in IIS | 4h | 2004-01-28 | 2004-01-28 |  | 0d |  | Server Administrator | 4h |
| 192 | 1.3.4.1.2.5.2.2 | Create content databases | 1d | 2004-01-28 | 2004-01-29 | 191 | 0d |  | Database Administrator | 8h |
| 193 | 1.3.4.1.2.5.2.3 | Extend virtual directories | 4h | 2004-01-29 | 2004-01-29 | 192 | 0d |  | Server Administrator | 4h |
| 194 | 1.3.4.1.2.5.2.4 | Configure self service site creation | 4h | 2004-01-30 | 2004-01-30 | 193 | 0d |  | Server Administrator | 4h |
| 195 | 1.3.4.1.2.5.2.5 | Configure site collection to use confirmation and auto-deletion | 4h | 2004-01-30 | 2004-01-30 | 194 | 7d | 0d | Server Administrator | 4h |
| 196 | 1.3.4.1.2.5.2.6 | Configure user rights for virtual directories | 2d | 2004-02-02 | 2004-02-03 | 195 | 7d | 0d | Server Administrator | 16h |
| 197 | 1.3.4.1.2.5.2.7 | Configure e-mail settings | 4h | 2004-02-04 | 2004-02-04 | 196 | 7d | 0d | Server Administrator | 4h |
| 198 | 1.3.4.1.2.5.2.8 | Create top-level Web sites | 4h | 2004-02-04 | 2004-02-04 | 197 | 7d | 0d | Server Administrator | 4h |
| 199 | 1.3.4.1.2.5.2.9 | Select pertinent quota template | 4h | 2004-02-05 | 2004-02-05 | 198 | 7d |  | Server Administrator | 4h |
| 200 | 1.3.4.1.2.5.3 | **Customize Site Template** | 12d | 2004-01-30 | 2004-02-17 | 194 | 0d |  |  | 96h |
| 201 | 1.3.4.1.2.5.3.1 | Implement custom lists | 2d | 2004-01-30 | 2004-02-03 |  | 0d |  | Team Members | 16h |
| 202 | 1.3.4.1.2.5.3.2 | Implement custom site layout template with FrontPage 2003 | 5d | 2004-02-03 | 2004-02-10 | 201 | 0d |  | Team Members | 40h |
| 203 | 1.3.4.1.2.5.3.3 | Define document folders | 5d | 2004-02-10 | 2004-02-17 | 202 | 0d |  | Team Members | 40h |
| 204 | 1.3.4.1.2.5.4 | Configure full-text indexing | 1d | 2004-02-05 | 2004-02-06 | 190 | 7d |  | Server Administrator | 8h |
| 205 | 1.3.4.1.2.5.5 | Setup blocked file types | 1d | 2004-02-05 | 2004-02-06 | 190 | 7d |  | Server Administrator | 8h |
| 206 | 1.3.4.1.2.5.6 | Configure usage analysis processing | 1d | 2004-02-05 | 2004-02-06 | 190 | 7d |  | Server Administrator | 8h |
| 207 | 1.3.4.1.2.5.7 | Configure DSP settings | 1d | 2004-02-05 | 2004-02-06 | 190 | 7d |  | Server Administrator | 8h |
| 208 | 1.3.4.1.2.5.8 | Configure Microsoft SharePoint Portal Server "v2.0" integration as desired (See Microsoft SharePoint Portal Server "v2.0" Deployment template for more information) | 5d | 2004-01-28 | 2004-02-03 |  | 9.5d |  | Server Administrator | 40h |

| ID | WBS | Task | Type | Duration | Start | Finish | Predecessors | Total slack | Free slack | Resources | Work |
| --- | --- | --- | --- | --- | --- | --- | --- | --- | --- | --- | --- |
| 209 | 1.3.4.2 | **Configure Windows SharePoint Services Clients** |  | 10d | 2004-01-13 | 2004-01-26 |  | 15.5d |  |  | 120h |
| 210 | 1.3.4.2.1 | Upgrade client operating systems as needed |  | 5d | 2004-01-13 | 2004-01-19 |  | 15.5d | 0d | Application Deployment | 40h |
| 211 | 1.3.4.2.2 | Upgrade client browsers as needed |  | 5d | 2004-01-20 | 2004-01-26 | 210 | 15.5d |  | Application Deployment | 40h |
| 212 | 1.3.4.2.3 | Upgrade client Microsoft Office System versions as desired |  | 5d | 2004-01-20 | 2004-01-26 | 210 | 15.5d |  | Application Deployment | 40h |
| 213 | 1.3.4.3 | **Perform Migration from SharePoint Team Services** |  | 7.5d | 2004-01-13 | 2004-01-22 |  | 18d |  |  | 76h |
| 214 | 1.3.4.3.1 | **Select a Migration Method** |  | 1d | 2004-01-13 | 2004-01-13 |  | 18d | 0d |  | 24h |
| 215 | 1.3.4.3.1.1 | Select full backup and restore approach |  | 1d | 2004-01-13 | 2004-01-13 |  | 18d |  | Systems Architect | 8h |
| 216 | 1.3.4.3.1.2 | Select migration using the site migration tool (simigrate.exe) with two live servers |  | 1d | 2004-01-13 | 2004-01-13 |  | 18d |  | Systems Architect | 8h |
| 217 | 1.3.4.3.1.3 | Consider in-place upgrade of SharePoint Team Services if other options are not acceptable |  | 1d | 2004-01-13 | 2004-01-13 |  | 18d |  | Systems Architect | 8h |
| 218 | 1.3.4.3.2 | Create a blank top-level Web site at the destination with no template applied |  | 4h | 2004-01-14 | 2004-01-14 | 214 | 18d | 0d | Server Administrator | 4h |
| 219 | 1.3.4.3.3 | Ensure settings are correct on the destination site |  | 4h | 2004-01-14 | 2004-01-14 | 218 | 18d | 0d | Server Administrator | 4h |
| 220 | 1.3.4.3.4 | Determine whether or not to preserve security settings |  | 4h | 2004-01-15 | 2004-01-15 | 219 | 18d | 0d | Systems Architect | 4h |
| 221 | 1.3.4.3.5 | Obtain administrative privileges on source and destination sites |  | 1d | 2004-01-15 | 2004-01-16 | 220 | 18d | 0d | Server Administrator | 8h |
| 222 | 1.3.4.3.6 | Execute the migration |  | 2d | 2004-01-16 | 2004-01-20 | 221 | 18d | 0d | Server Administrator | 16h |
| 223 | 1.3.4.3.7 | Compare migrated site to the original (not possible with in-place upgrade) |  | 2d | 2004-01-20 | 2004-01-22 | 222 | 18d |  | Team Members | 16h |
| 224 | 1.3.5 | **Test Production Environment** |  | 20d | 2004-02-17 | 2004-03-16 | 180 | 0d |  |  | 160h |
| 225 | 1.3.5.1 | Conduct desktop test scenarios |  | 5d | 2004-02-17 | 2004-02-24 |  | 0d |  | Test/QA | 40h |
| 226 | 1.3.5.2 | Conduct server test scenarios |  | 5d | 2004-02-24 | 2004-03-02 | 225 | 0d |  | Test/QA | 40h |
| 227 | 1.3.5.3 | Conduct third-party application test scenarios |  | 5d | 2004-03-02 | 2004-03-09 | 226 | 0d |  | Test/QA | 40h |
| 228 | 1.3.5.4 | Conduct custom application test scenarios |  | 5d | 2004-03-09 | 2004-03-16 | 227 | 0d |  | Test/QA | 40h |
| 229 | 1.3.6 | Production Deployment complete | milestone | 0d | 2004-03-16 | 2004-03-16 | 180, 224 | 0d |  |  |  |
| 230 | 1.4 | **Post-deployment** |  | 30d | 2004-03-16 | 2004-04-27 | 129 | 0d |  |  | 258.4h |
| 231 | 1.4.1 | **Implement and Test Backup** |  | 1.25d | 2004-03-16 | 2004-03-17 |  | 28.75d |  |  | 24h |
| 232 | 1.4.1.1 | Implement backup strategy for Windows SharePoint Services |  | 4h | 2004-03-16 | 2004-03-16 |  | 28.75d | 0d | Database Administrator; Server Administrator | 8h |
| 233 | 1.4.1.2 | Test Windows SharePoint Services backup strategy |  | 4h | 2004-03-17 | 2004-03-17 | 232 | 28.75d | 0d | Database Administrator; Server Administrator | 8h |
| 234 | 1.4.1.3 | Implement and test disaster planning and recovery strategy |  | 2h | 2004-03-17 | 2004-03-17 | 233 | 28.75d | 0d | Database Administrator; Network Administrator; Server Administrator; Systems Architect | 8h |
| 235 | 1.4.1.4 | Implement and test backup complete | milestone | 0d | 2004-03-17 | 2004-03-17 | 234 | 28.75d |  |  |  |

| ID | WBS | Task | Type | Duration | Start | Finish | Predecessors | Total slack | Free slack | Resources | Work |
| --- | --- | --- | --- | --- | --- | --- | --- | --- | --- | --- | --- |
| 236 | 1.4.2 | **Implement Performance Tuning and Monitoring** |  | 30d | 2004-03-16 | 2004-04-27 |  | 0d |  |  | 115.2h |
| 237 | 1.4.2.1 | Observe performance parameters using performance monitor |  | 30d | 2004-03-16 | 2004-04-27 |  | 0d |  | Database Administrator [6%]; Server Administrator [6%] | 28.8h |
| 238 | 1.4.2.2 | Compare performance to plan |  | 30d | 2004-03-16 | 2004-04-27 |  | 0d |  | Database Administrator [6%]; Server Administrator [6%] | 28.8h |
| 239 | 1.4.2.3 | Tweak settings as needed |  | 30d | 2004-03-16 | 2004-04-27 |  | 0d |  | Database Administrator [6%]; Server Administrator [6%] | 28.8h |
| 240 | 1.4.2.4 | Re-forecast demand and plan appropriately |  | 30d | 2004-03-16 | 2004-04-27 |  | 0d |  | Database Administrator [6%]; Server Administrator [6%] | 28.8h |
| 241 | 1.4.2.5 | Implement performance tuning and monitoring complete | milestone | 0d | 2004-04-27 | 2004-04-27 | 237, 238, 239, 240 | 0d |  |  |  |
| 242 | 1.4.3 | **Set Up System Maintenance** |  | 30d | 2004-03-16 | 2004-04-27 |  | 0d |  |  | 23.2h |
| 243 | 1.4.3.1 | Create SQL Server maintenance plans |  | 4h | 2004-03-16 | 2004-03-16 |  | 29.5d |  | Database Administrator | 4h |
| 244 | 1.4.3.2 | Administer user accounts |  | 30d | 2004-03-16 | 2004-04-27 |  | 0d |  | Database Administrator [4%] | 9.6h |
| 245 | 1.4.3.3 | Monitor log and data files |  | 30d | 2004-03-16 | 2004-04-27 |  | 0d |  | Database Administrator [4%] | 9.6h |
| 246 | 1.4.3.4 | Set up system maintenance complete | milestone | 0d | 2004-04-27 | 2004-04-27 | 243, 244, 245 | 0d |  |  |  |
| 247 | 1.4.4 | Obtain user feedback |  | 2d | 2004-03-16 | 2004-03-18 |  | 21d | 0d | Team Members; Project Managers | 32h |
| 248 | 1.4.5 | Evaluate lessons learned |  | 3d | 2004-03-18 | 2004-03-23 | 247 | 21d | 0d | Team Members | 24h |
| 249 | 1.4.6 | Modify items as necessary |  | 3d | 2004-03-23 | 2004-03-26 | 248 | 21d | 0d | Team Members | 24h |
| 250 | 1.4.7 | Establish on-going Windows SharePoint Services users team |  | 1d | 2004-03-26 | 2004-03-29 | 249 | 21d |  | Team Members; Project Managers | 16h |
| 251 | 1.4.8 | Post-deployment complete | milestone | 0d | 2004-04-27 | 2004-04-27 | 231, 236, 242, 250 | 0d |  |  |  |
| 252 | 1.5 | Microsoft Windows SharePoint Services deployment complete | milestone | 0d | 2004-04-27 | 2004-04-27 | 230 | 0d |  |  |  |
