# Residential Construction

Schedule from MS Project XML, 2000-01-03 to 2000-08-01.

## Calendars

- Standard: Mon-Fri 08:00-12:00, 13:00-17:00; Sat-Sun off.

## Resources

| Resource |
| --- |
| Concrete contractor |
| Finish carpentry contractor |
| Fencing contractor |
| Masonry contractor |
| General contractor |
| Architect |
| Owner |
| Mortgage lender |
| Inspector |
| Electric company |
| Site excavation contractor |
| Electric contractor |
| Plumbing contractor |
| Framing contractor |
| Roofing contractor |
| Heating and AC contractor |
| Insulation contractor |
| Drywall contractor |
| Painting contractor |
| Flooring contractor |
| Appliance contractor |
| Landscape contractor |
| Maid service |

## Schedule

| ID | WBS | Task | Type | Duration | Start | Finish | Predecessors | Total slack | Resources | Work |
| --- | --- | --- | --- | --- | --- | --- | --- | --- | --- | --- |
| 1 | 1 | **Single Family House - Architect Design (3,000 square feet with full basement)** |  | 152d | 2000-01-03 | 2000-08-01 |  | 0d |  | 1782.4h |
| 2 | 1.1 | **General Conditions** |  | 21d | 2000-01-03 | 2000-01-31 |  | 0d |  | 230.4h |
| 3 | 1.1.1 | Finalize plans and develop estimate with owner, architect |  | 20d | 2000-01-03 | 2000-01-28 |  | 0d | General contractor [50%]; Architect [50%]; Owner [12%]; Mortgage lender [12%] | 198.4h |
| 4 | 1.1.2 | Sign contract and notice to proceed |  | 1d | 2000-01-31 | 2000-01-31 | 3 | 0d | General contractor; Architect; Owner; Mortgage lender | 32h |
| 5 | 1.1.3 | **Apply for Permits** |  | 0d | 2000-01-31 | 2000-01-31 |  | 0d |  |  |
| 6 | 1.1.3.1 | Secure foundation permit | milestone | 0d | 2000-01-31 | 2000-01-31 | 4 | 0d | General contractor |  |
| 7 | 1.1.3.2 | Secure framing permit | milestone | 0d | 2000-01-31 | 2000-01-31 | 4 | 0d | General contractor |  |
| 8 | 1.1.3.3 | Secure electrical permit | milestone | 0d | 2000-01-31 | 2000-01-31 | 4 | 0d | General contractor |  |
| 9 | 1.1.3.4 | Secure plumbing permit | milestone | 0d | 2000-01-31 | 2000-01-31 | 4 | 0d | General contractor |  |
| 10 | 1.1.3.5 | Secure HVAC permit | milestone | 0d | 2000-01-31 | 2000-01-31 | 4 | 0d | General contractor |  |
| 11 | 1.1.3.6 | Secure miscellaneous permits | milestone | 0d | 2000-01-31 | 2000-01-31 | 4 | 0d | General contractor |  |
| 12 | 1.2 | **Site Work** |  | 3d | 2000-02-01 | 2000-02-03 |  | 0d |  | 32h |
| 13 | 1.2.1 | Clear and grub lot |  | 1d | 2000-02-01 | 2000-02-01 | 6, 7, 8, 9, 11, 10 | 0d | Site excavation contractor | 8h |
| 14 | 1.2.2 | Install temporary power service |  | 1d | 2000-02-02 | 2000-02-02 | 13 | 0d | Electric company | 8h |
| 15 | 1.2.3 | Install underground utilities |  | 1d | 2000-02-03 | 2000-02-03 | 14 | 0d | Electric contractor; Plumbing contractor | 16h |
| 16 | 1.3 | **Foundation** |  | 42d | 2000-02-04 | 2000-04-03 |  | 0d |  | 280h |
| 17 | 1.3.1 | Excavate for foundations |  | 3d | 2000-02-04 | 2000-02-08 | 15 | 0d | Site excavation contractor | 24h |
| 18 | 1.3.2 | Form basement walls |  | 13d | 2000-02-09 | 2000-02-25 | 17 | 0d | Concrete contractor | 104h |
| 19 | 1.3.3 | Place concrete for foundations & basement walls |  | 12d | 2000-02-28 | 2000-03-14 | 18 | 0d | Concrete contractor | 96h |
| 20 | 1.3.4 | Cure basement walls for 7 days |  | 7d | 2000-03-15 | 2000-03-23 | 19 | 0d |  |  |
| 21 | 1.3.5 | Strip basement wall forms |  | 2d | 2000-03-24 | 2000-03-27 | 20 | 0d | Concrete contractor | 16h |
| 22 | 1.3.6 | Waterproof/insulate basement walls |  | 2d | 2000-03-28 | 2000-03-29 | 21 | 0d | Concrete contractor | 16h |
| 23 | 1.3.7 | Perform foundation inspection |  | 1d | 2000-03-30 | 2000-03-30 | 22, 17 | 0d | Inspector | 8h |
| 24 | 1.3.8 | Backfill foundation |  | 2d | 2000-03-31 | 2000-04-03 | 23 | 0d | Site excavation contractor | 16h |

| ID | WBS | Task | Duration | Start | Finish | Predecessors | Total slack | Free slack | Resources | Work |
| --- | --- | --- | --- | --- | --- | --- | --- | --- | --- | --- |
| 25 | 1.4 | **Framing** | 22d | 2000-04-04 | 2000-05-03 |  | 0d |  |  | 176h |
| 26 | 1.4.1 | Install 1st floor joists | 2d | 2000-04-04 | 2000-04-05 | 24 | 0d |  | Framing contractor | 16h |
| 27 | 1.4.2 | Lay 1st floor decking | 2d | 2000-04-06 | 2000-04-07 | 26 | 0d |  | Framing contractor | 16h |
| 28 | 1.4.3 | Frame 1st floor walls | 4d | 2000-04-10 | 2000-04-13 | 27 | 0d |  | Framing contractor | 32h |
| 29 | 1.4.4 | Frame 1st floor corners | 1d | 2000-04-14 | 2000-04-14 | 28 | 0d |  | Framing contractor | 8h |
| 30 | 1.4.5 | Install 2nd floor joists | 2d | 2000-04-17 | 2000-04-18 | 29 | 0d |  | Framing contractor | 16h |
| 31 | 1.4.6 | Frame 2nd floor decking | 2d | 2000-04-19 | 2000-04-20 | 30 | 0d |  | Framing contractor | 16h |
| 32 | 1.4.7 | Frame 2nd floor walls | 3d | 2000-04-21 | 2000-04-25 | 31 | 0d |  | Framing contractor | 24h |
| 33 | 1.4.8 | Frame 2nd floor corners | 2d | 2000-04-26 | 2000-04-27 | 32 | 0d |  | Framing contractor | 16h |
| 34 | 1.4.9 | Complete roof framing | 3d | 2000-04-28 | 2000-05-02 | 33 | 0d |  | Framing contractor | 24h |
| 35 | 1.4.10 | Conduct framing inspection | 1d | 2000-05-03 | 2000-05-03 | 34 | 0d |  | Inspector | 8h |
| 36 | 1.5 | **Dry In** | 22d | 2000-05-03 | 2000-06-01 |  | 0d |  |  | 152h |
| 37 | 1.5.1 | Install 1st floor sheathing | 3d | 2000-05-04 | 2000-05-08 | 35 | 0d |  | Framing contractor | 24h |
| 38 | 1.5.2 | Install 2nd floor sheathing | 3d | 2000-05-09 | 2000-05-11 | 37 | 0d |  | Framing contractor | 24h |
| 39 | 1.5.3 | Install roof decking | 3d | 2000-05-03 | 2000-05-05 | 34 | 4d | 0d | Framing contractor | 24h |
| 40 | 1.5.4 | Install felt, flashing and shingles | 3d | 2000-05-19 | 2000-05-23 | 48 | 0d |  | Roofing contractor | 24h |
| 41 | 1.5.5 | Hang 1st floor exterior doors | 1d | 2000-05-24 | 2000-05-24 | 40 | 0d |  | Framing contractor | 8h |
| 42 | 1.5.6 | Install 1st floor windows | 3d | 2000-05-25 | 2000-05-29 | 41 | 0d |  | Framing contractor | 24h |
| 43 | 1.5.7 | Install 2nd floor windows | 3d | 2000-05-30 | 2000-06-01 | 42 | 0d |  | Framing contractor | 24h |
| 44 | 1.6 | **Exterior Finishes** | 19d | 2000-06-02 | 2000-06-28 |  | 5d |  |  | 152h |
| 45 | 1.6.1 | Complete exterior brick | 16d | 2000-06-02 | 2000-06-23 | 43 | 5d | 0d | Masonry contractor | 128h |
| 46 | 1.6.2 | Complete exterior siding | 3d | 2000-06-26 | 2000-06-28 | 45 | 5d | 0d | Framing contractor | 24h |
| 47 | 1.7 | **Utility Rough-B97Ins and Complete Concrete** | 21d | 2000-05-08 | 2000-06-05 |  | 4d |  |  | 232h |
| 48 | 1.7.1 | Rough-in plumbing | 5d | 2000-05-12 | 2000-05-18 | 39, 38 | 0d |  | Plumbing contractor | 40h |
| 49 | 1.7.2 | Conduct rough-in plumbing inspection | 1d | 2000-05-19 | 2000-05-19 | 48 | 20d | 0d | Inspector | 8h |
| 50 | 1.7.3 | Place concrete for basement floor | 11d | 2000-05-22 | 2000-06-05 | 49 | 33d |  | Concrete contractor | 88h |
| 51 | 1.7.4 | Rough-in electrical | 5d | 2000-05-12 | 2000-05-18 | 39, 38 | 6d | 0d | Electric contractor | 40h |
| 52 | 1.7.5 | Conduct rough-in electrical inspection | 1d | 2000-05-19 | 2000-05-19 | 51 | 6d | 0d | Inspector | 8h |
| 53 | 1.7.6 | Rough-in HVAC | 3d | 2000-05-22 | 2000-05-24 | 52 | 6d | 0d | Heating and AC contractor | 24h |
| 54 | 1.7.7 | Conduct rough-in HVAC inspection | 1d | 2000-05-25 | 2000-05-25 | 53 | 24d |  | Inspector | 8h |
| 55 | 1.7.8 | Rough-in communication - phone, cable, computer, alarm | 2d | 2000-05-08 | 2000-05-09 | 39 | 17d |  | Electric contractor | 16h |

| ID | WBS | Task | Duration | Start | Finish | Predecessors | Total slack | Free slack | Resources | Work |
| --- | --- | --- | --- | --- | --- | --- | --- | --- | --- | --- |
| 56 | 1.8 | **Interior Finishes** | 30d | 2000-06-02 | 2000-07-13 |  | 0d |  |  | 408h |
| 57 | 1.8.1 | **Insulation** | 11d | 2000-06-02 | 2000-06-16 |  | 0d |  |  | 32h |
| 58 | 1.8.1.1 | Place wall insulation - 1st floor | 1d | 2000-06-02 | 2000-06-02 | 37, 43, 55, 53, 51, 38 | 0d |  | Insulation contractor | 8h |
| 59 | 1.8.1.2 | Place wall insulation - 2nd floor | 1d | 2000-06-05 | 2000-06-05 | 58 | 27d | 3d | Insulation contractor | 8h |
| 60 | 1.8.1.3 | Place ceiling insulation - 2nd floor | 1d | 2000-06-15 | 2000-06-15 | 66, 59 | 24d | 0d | Insulation contractor | 8h |
| 61 | 1.8.1.4 | Conduct insulation inspection | 1d | 2000-06-16 | 2000-06-16 | 60 | 24d |  | Inspector | 8h |
| 62 | 1.8.2 | **Drywall** | 9d | 2000-06-05 | 2000-06-15 |  | 0d |  |  | 80h |
| 63 | 1.8.2.1 | Install drywall - 1st floor walls | 2d | 2000-06-05 | 2000-06-06 | 58 | 0d |  | Drywall contractor | 16h |
| 64 | 1.8.2.2 | Install drywall - 1st floor overhead | 2d | 2000-06-07 | 2000-06-08 | 63 | 0d |  | Drywall contractor | 16h |
| 65 | 1.8.2.3 | Install drywall 2nd floor walls | 2d | 2000-06-09 | 2000-06-12 | 64, 59 | 24d | 0d | Drywall contractor | 16h |
| 66 | 1.8.2.4 | Install drywall 2nd floor overhead | 2d | 2000-06-13 | 2000-06-14 | 65 | 24d | 0d | Drywall contractor | 16h |
| 67 | 1.8.2.5 | Tape and float 1st floor drywall | 1d | 2000-06-09 | 2000-06-09 | 64 | 0d |  | Drywall contractor | 8h |
| 68 | 1.8.2.6 | Tape and float 2nd floor drywall | 1d | 2000-06-15 | 2000-06-15 | 66, 67 | 33d |  | Drywall contractor | 8h |
| 69 | 1.8.3 | **Paint and Wallpaper** | 17d | 2000-06-12 | 2000-07-04 |  | 0d |  |  | 72h |
| 70 | 1.8.3.1 | Texture all except entry and kitchen - 1st floor | 1d | 2000-06-12 | 2000-06-12 | 67 | 0d |  | Painting contractor | 8h |
| 71 | 1.8.3.2 | Paint all except entry and kitchen - 1st floor | 1d | 2000-06-13 | 2000-06-13 | 70 | 0d |  | Painting contractor | 8h |
| 72 | 1.8.3.3 | Hang wallpaper entry and kitchen - 1st floor | 1d | 2000-06-14 | 2000-06-14 | 71 | 0d |  | Painting contractor | 8h |
| 73 | 1.8.3.4 | Texture all - 2nd floor | 1d | 2000-06-13 | 2000-06-13 | 70 | 34d | 0d | Painting contractor | 8h |
| 74 | 1.8.3.5 | Paint all - 2nd floor | 1d | 2000-06-14 | 2000-06-14 | 73 | 34d |  | Painting contractor | 8h |
| 75 | 1.8.3.6 | Paint exterior siding & trim work | 4d | 2000-06-29 | 2000-07-04 | 46 | 5d | 0d | Painting contractor | 32h |
| 76 | 1.8.4 | **Cabinets** | 6d | 2000-06-15 | 2000-06-22 |  | 0d |  |  | 48h |
| 77 | 1.8.4.1 | Install 1st floor - kitchen cabinets | 2d | 2000-06-15 | 2000-06-16 | 72 | 0d |  | Finish carpentry contractor | 16h |
| 78 | 1.8.4.2 | Install 1st floor - master bath and guest cabinets | 1d | 2000-06-19 | 2000-06-19 | 77 | 0d |  | Finish carpentry contractor | 8h |
| 79 | 1.8.4.3 | Install 2nd floor - hall bath and private bath cabinets | 1d | 2000-06-20 | 2000-06-20 | 78 | 1d | 0d | Finish carpentry contractor | 8h |
| 80 | 1.8.4.4 | Install chair rails, crown moldings, trim | 2d | 2000-06-21 | 2000-06-22 | 79 | 20d |  | Finish carpentry contractor | 16h |

| ID | WBS | Task | Duration | Start | Finish | Predecessors | Total slack | Free slack | Resources | Work |
| --- | --- | --- | --- | --- | --- | --- | --- | --- | --- | --- |
| 81 | 1.8.5 | **Finish Plumbing** | 6d | 2000-06-19 | 2000-06-26 |  | 0d |  |  | 48h |
| 82 | 1.8.5.1 | Complete 1st floor - kitchen plumbing | 1d | 2000-06-19 | 2000-06-19 | 77, 49 | 0d |  | Plumbing contractor | 8h |
| 83 | 1.8.5.2 | Complete 1st floor - master bath and guest plumbing | 2d | 2000-06-20 | 2000-06-21 | 82, 78 | 0d |  | Plumbing contractor | 16h |
| 84 | 1.8.5.3 | Complete 2nd floor - hall bath and private bath plumbing | 2d | 2000-06-22 | 2000-06-23 | 83, 79 | 0d |  | Plumbing contractor | 16h |
| 85 | 1.8.5.4 | Conduct finish plumbing inspection | 1d | 2000-06-26 | 2000-06-26 | 84 | 0d |  | Inspector | 8h |
| 86 | 1.8.6 | **Finish Electrical** | 3d | 2000-06-26 | 2000-06-28 |  | 1d |  |  | 40h |
| 87 | 1.8.6.1 | Complete 1st floor circuits to service panel | 1d | 2000-06-26 | 2000-06-26 | 84, 52 | 3d | 0d | Electric contractor | 8h |
| 88 | 1.8.6.2 | Complete 2nd floor circuits to service panel | 1d | 2000-06-27 | 2000-06-27 | 87 | 3d | 0d | Electric contractor | 8h |
| 89 | 1.8.6.3 | Conduct finish electrical inspection | 1d | 2000-06-28 | 2000-06-28 | 88 | 3d |  | Inspector | 8h |
| 90 | 1.8.6.4 | Complete communications wiring - phone, cable, computer, alarm | 2d | 2000-06-27 | 2000-06-28 | 85 | 0d |  | Electric contractor | 16h |
| 91 | 1.8.7 | **Finish HVAC** | 3d | 2000-06-29 | 2000-07-03 |  | 0d |  |  | 24h |
| 92 | 1.8.7.1 | Complete 1st floor - zone 1 HVAC | 1d | 2000-06-29 | 2000-06-29 | 90, 54 | 0d |  | Heating and AC contractor | 8h |
| 93 | 1.8.7.2 | Complete 2nd floor - zone 2 HVAC | 1d | 2000-06-30 | 2000-06-30 | 92 | 0d |  | Heating and AC contractor | 8h |
| 94 | 1.8.7.3 | Conduct HVAC inspection | 1d | 2000-07-03 | 2000-07-03 | 93 | 0d |  | Inspector | 8h |
| 95 | 1.8.8 | **Carpet, Tile and Appliances** | 8d | 2000-07-04 | 2000-07-13 |  | 0d |  |  | 64h |
| 96 | 1.8.8.1 | Tile entry, kitchen and baths | 3d | 2000-07-04 | 2000-07-06 | 89, 94 | 0d |  | Flooring contractor | 24h |
| 97 | 1.8.8.2 | Carpet 1st floor | 2d | 2000-07-07 | 2000-07-10 | 96 | 0d |  | Flooring contractor | 16h |
| 98 | 1.8.8.3 | Carpet 2nd floor | 2d | 2000-07-11 | 2000-07-12 | 97 | 0d |  | Flooring contractor | 16h |
| 99 | 1.8.8.4 | Install appliances | 1d | 2000-07-13 | 2000-07-13 | 98 | 0d |  | Appliance contractor | 8h |
| 100 | 1.9 | **Landscaping and Grounds Work** | 12d | 2000-07-05 | 2000-07-20 |  | 0d |  |  | 56h |
| 101 | 1.9.1 | Pour concrete driveway and sidewalks | 2d | 2000-07-05 | 2000-07-06 | 75 | 5d |  | Concrete contractor | 16h |
| 102 | 1.9.2 | Install backyard fence | 2d | 2000-07-14 | 2000-07-17 | 99, 101 | 0d |  | Fencing contractor | 16h |
| 103 | 1.9.3 | Sod and complete plantings - front yard | 2d | 2000-07-18 | 2000-07-19 | 102 | 0d |  | Landscape contractor | 16h |
| 104 | 1.9.4 | Sod and complete plantings - backyard | 1d | 2000-07-20 | 2000-07-20 | 103 | 0d |  | Landscape contractor | 8h |

| ID | WBS | Task | Duration | Start | Finish | Predecessors | Total slack | Resources | Work |
| --- | --- | --- | --- | --- | --- | --- | --- | --- | --- |
| 105 | 1.10 | **Final Acceptance** | 8d | 2000-07-21 | 2000-08-01 |  | 0d |  | 64h |
| 106 | 1.10.1 | Complete final inspection for certificate of occupancy | 1d | 2000-07-21 | 2000-07-21 | 104, 94, 89, 85, 61, 80, 50 | 0d | Inspector | 8h |
| 107 | 1.10.2 | Cleanup for occupancy | 1d | 2000-07-24 | 2000-07-24 | 99, 106 | 0d | Maid service | 8h |
| 108 | 1.10.3 | Perform final walk-through inspection | 1d | 2000-07-25 | 2000-07-25 | 107 | 0d | Owner | 8h |
| 109 | 1.10.4 | Complete punch list items | 5d | 2000-07-26 | 2000-08-01 | 108 | 0d | General contractor | 40h |
